# Office Move

How a schedule from MS Project changed from version to version. A marks actual dates.

## Version 1 (saved 2012-12-13, file TaskBars.mpp)

| ID | WBS | Task | Duration | Start | Finish | Predecessors | Complete | Total float |
| --- | --- | --- | --- | --- | --- | --- | --- | --- |
| 1 | 1 | **Planning Move** | 80d | 2013-01-07 A | 2013-04-26 |  | 9% | 108d |
| 2 | 1.1 | **Document requirements** | 29d | 2013-01-07 | 2013-02-14 |  |  | 1.5d |
| 3 |  | Identify physical requirements | 28d | 2013-01-07 | 2013-02-13 |  |  | 1.5d |
| 4 |  | Draft the budget | 10d | 2013-01-07 | 2013-01-18 |  |  | 47d |
| 5 |  | Review requirements and budget | 1d | 2013-02-14 | 2013-02-14 | 4, 3 |  | 159d |
| 6 | 1.2 | **Choose new location** | 72d | 2013-01-07 A | 2013-04-16 |  | 11% | 116d |
| 7 | 1.2.1 | **Evaluate build sites** | 0d | 2013-01-07 | 2013-01-07 |  |  | 188d |
| 8 |  | Identify potential build sites | 20d | 2013-01-07 | 2013-02-01 |  |  | 68d |
| 9 |  | Identify construction needs | 30d | 2013-02-04 | 2013-03-15 | 8 |  | 68d |
| 10 |  | Select site | 10d | 2013-03-18 | 2013-03-29 | 9 |  | 68d |
| 11 |  | Finalize purchase | 60d | 2013-04-01 | 2013-06-21 | 10 |  | 68d |
| 12 | 1.2.2 | **Evaluate lease sites** | 44d | 2013-02-14 A | 2013-04-16 |  | 11% | 5d |
| 13 |  | Identify potential sites | 20d | 2013-02-14 | 2013-03-13 | 3 |  | 1.5d |
| 14 |  | Identify tenant improvements | 7.5d | 2013-03-14 | 2013-03-25 | 13 |  | 1.5d |
| 15 |  | Select site | 10d | 2013-03-20 A | 2013-04-02 | 14, 4 | 50% | 5d |
| 16 |  | Finalize lease | 10d | 2013-04-03 | 2013-04-16 | 15 |  | 5d |
| 17 | 1.3 | **Identify costs** | 20d | 2013-04-01 A | 2013-04-26 |  | 25% |  |
| 18 |  | Obtain estimates for tenant improvements | 10d | 2013-04-01 A | 2013-04-12 | 14 | 50% | 2d |
| 19 |  | Identify additional costs (furniture, equipment) | 10d | 2013-04-03 | 2013-04-16 | 15 |  | 5d |
| 20 |  | Hire contractors for major tenant improvements | 5d | 2013-04-15 | 2013-04-19 | 18 |  | 2d |
| 21 |  | Planning complete | 0d | 2013-04-19 | 2013-04-19 | 13, 15, 16, 14, 19, 20 |  | 2d |
| 22 | 2 | **Construct and set up space** | 102d | 2013-04-14 | 2013-08-31 | 21 |  |  |
| 23 | 2.1 | **Prep phone system** | 5d? | 2013-04-22 | 2013-04-26 | 21 |  | 90d |
| 24 |  | Review phone system requirements | 3d | 2013-04-22 | 2013-04-24 |  |  | 90d |
| 25 |  | Order new phone numbers | 1d | 2013-04-25 | 2013-04-25 | 24 |  | 90d |
| 26 |  | Order long-distance service | 1d? | 2013-04-26 | 2013-04-26 | 25 |  | 90d |
| 27 |  | Phone lines ordered | 0d | 2013-04-26 | 2013-04-26 | 26 |  | 90d |
| 28 | 2.2 | **Design and construction** | 93d? | 2013-04-22 | 2013-08-28 |  |  | 2d |
| 29 | 2.2.1 | **Design space** | 66d? | 2013-04-22 | 2013-07-22 |  |  | 2d |
| 30 |  | Design office space | 25d? | 2013-04-22 | 2013-05-24 | 21 |  | 2d |
| 31 |  | Prepare drawings | 5d | 2013-05-27 | 2013-05-31 | 30 |  | 2d |
| 32 |  | Design IT infrastructure | 10d | 2013-06-03 | 2013-06-14 | 31 |  | 2d |
| 33 |  | Obtain final budget estimates | 10d | 2013-06-17 | 2013-06-28 | 32 |  | 2d |
| 34 |  | Sign off on plans | 1d | 2013-07-01 | 2013-07-01 | 33 |  | 2d |
| 35 |  | Obtain permits | 3w | 2013-07-02 | 2013-07-22 | 34 |  | 2d |
| 36 | 2.2.2 | **Construction** | 20d | 2013-07-23 | 2013-08-19 | 35 |  | 2d |
| 37 |  | Demolish walls | 5d | 2013-07-23 | 2013-07-29 |  |  | 2d |
| 38 |  | Construct new walls | 15d | 2013-07-30 | 2013-08-19 | 37 |  | 2d |
| 39 |  | Elec, mech, HVAC | 15d | 2013-07-30 | 2013-08-19 | 37 |  | 2d |
| 40 | 2.2.3 | **Walkthrough and repair** | 7d | 2013-08-20 | 2013-08-28 | 39, 38 |  | 2d |
| 41 |  | Repair issues | 5d | 2013-08-20 | 2013-08-26 |  |  | 2d |
| 42 |  | Schedule open house for employees | 1d | 2013-08-20 | 2013-08-20 |  |  | 8d |
| 43 |  | Clean new office | 1d | 2013-08-27 | 2013-08-27 | 41 |  | 2d |
| 44 |  | Construction complete | 0d | 2013-08-27 | 2013-08-27 | 43 |  | 2d |
| 45 |  | Open house | 1d | 2013-08-28 | 2013-08-28 | 44 |  | 2d |
| 46 | 2.3 | **Set up services** | 10d | 2013-06-17 | 2013-06-28 | 21FS+2mo |  | 45d |
| 47 |  | Order change of address labels | 1d | 2013-06-17 | 2013-06-17 |  |  | 54d |
| 48 |  | Obtain estimates from signage companies | 7d | 2013-06-17 | 2013-06-25 |  |  | 45d |
| 49 |  | Order signage | 3d | 2013-06-26 | 2013-06-28 | 48 |  | 45d |
| 50 |  | Arrange external maintenance | 5d | 2013-06-17 | 2013-06-21 |  |  | 50d |
| 51 |  | Arrange for trash disposal | 1d | 2013-06-17 | 2013-06-17 |  |  | 54d |
| 52 |  | Arrange for cleaning service | 1d | 2013-06-17 | 2013-06-17 |  |  | 54d |
| 53 |  | Arrange for recycling | 1d | 2013-06-17 | 2013-06-17 |  |  | 54d |
| 54 |  | Order security system | 2d | 2013-06-17 | 2013-06-18 |  |  | 53d |
| 55 |  | Send change of address to vendors, customers, supscriptions | 1d | 2013-06-17 | 2013-06-17 |  |  | 54d |
| 56 |  | Notify all leasers of equipment move | 1d | 2013-06-17 | 2013-06-17 |  |  | 54d |
| 57 |  | Order checks with new address | 1d | 2013-06-17 | 2013-06-17 |  |  | 54d |
| 58 |  | Schedule disconnection of utilities | 1d | 2013-06-17 | 2013-06-17 |  |  | 54d |
| 59 | 2.4 | **Create office assignment layout** | 36d | 2013-04-15 | 2013-06-03 |  |  | 64d |
| 60 |  | Assign office spaces | 5d | 2013-05-27 | 2013-05-31 | 30 |  | 63d |
| 61 |  | Assign new phone numbers, extensions | 2d | 2013-04-15 | 2013-04-16 |  |  | 96d |
| 62 |  | Create new office extension directory | 1d | 2013-04-17 | 2013-04-17 | 61 |  | 96d |
| 63 |  | Create new office layout map | 1d | 2013-06-03 | 2013-06-03 | 60 |  | 63d |
| 64 |  | Create new fax cover sheet | 1d | 2013-04-18 | 2013-04-18 | 62 |  | 96d |
| 65 |  | Office plan complete | 0d | 2013-06-03 | 2013-06-03 | 63, 62 |  | 63d |
| 66 | 2.5 | **Order new stationery** | 1d | 2013-06-04 | 2013-06-04 | 65 |  | 63d |
| 67 |  | Order new letterhead and envelopes | 1d | 2013-06-04 | 2013-06-04 |  |  | 63d |
| 68 |  | Order new business cards | 1d | 2013-06-04 | 2013-06-04 |  |  | 63d |
| 69 |  | Order new business forms | 1d | 2013-06-04 | 2013-06-04 |  |  | 63d |
| 70 |  | Get shipping labels | 1d | 2013-06-04 | 2013-06-04 |  |  | 63d |

| ID | WBS | Task | Duration | Start | Finish | Predecessors | Total float |
| --- | --- | --- | --- | --- | --- | --- | --- |
| 71 |  | Create map to location | 1d | 2013-06-04 | 2013-06-04 |  | 63d |
| 72 |  | Notify post office of change of address | 1d | 2013-06-04 | 2013-06-04 |  | 63d |
| 73 |  | Update company website with new information | 1d | 2013-06-04 | 2013-06-04 |  | 63d |
| 74 | 2.6 | **Hire movers** | 13d | 2013-05-20 | 2013-06-05 | 21FS+1mo | 62d |
| 75 |  | Obtain estimates from moving companies | 12d | 2013-05-20 | 2013-06-04 |  | 62d |
| 76 |  | Choose moving company | 1d | 2013-06-05 | 2013-06-05 | 75 | 62d |
| 77 | 2.7 | **Obtain insurance** | 10d | 2013-04-15 | 2013-04-26 |  | 90d |
| 78 |  | Appraise assets | 3d | 2013-04-15 | 2013-04-17 |  | 90d |
| 79 |  | Obtain quotes for insurance | 6d | 2013-04-18 | 2013-04-25 | 78 | 90d |
| 80 |  | Purchase insurance | 1d | 2013-04-26 | 2013-04-26 | 79 | 90d |
| 81 |  | Construction and prep complete | 0d | 2013-08-31 | 2013-08-31 | 22, 76, 80, 59 | 0d |
| 82 | 4 | **Move** | 9d | 2013-09-02 | 2013-09-12 | 81 | 0d |
| 83 |  | Inventory office | 5d | 2013-09-02 | 2013-09-06 |  | 0d |
| 84 |  | Distribute new keys, cards | 1d | 2013-09-02 | 2013-09-02 |  | 8d |
| 85 |  | Collect old keys, cards | 1d | 2013-09-02 | 2013-09-02 |  | 4d |
| 86 |  | Pack and move | 4d | 2013-09-09 | 2013-09-12 | 85, 83 | 0d |
| 87 |  | Move complete | 0d | 2013-09-12 | 2013-09-12 | 61, 83, 84, 67, 68, 69, 41, 43, 72, 73, 58, 86 | 0d |
| 88 | 5 | **Pre-move tasks** | 6d | 2013-09-02 | 2013-09-09 | 82SS | 12d |
| 89 |  | Install phone system | 6d | 2013-09-02 | 2013-09-09 | 27 | 12d |
| 90 | 6 | **Post-Move** | 9d | 2013-09-13 | 2013-09-25 | 87 | 0d |
| 91 |  | Check for damage and missing items | 9d | 2013-09-13 | 2013-09-25 |  | 0d |
| 92 |  | Schedule phone training | 1d | 2013-09-13 | 2013-09-13 |  | 8d |
| 93 |  | Schedule security training | 1d | 2013-09-13 | 2013-09-13 |  | 8d |
| 94 |  | Schedule fire drill | 1d | 2013-09-13 | 2013-09-13 |  | 8d |
| 95 |  | Schedule open house for clients | 1d | 2013-09-13 | 2013-09-13 |  | 8d |
| 96 |  | Office move complete | 0d | 2013-09-25 | 2013-09-25 | 87, 91, 92, 93, 94, 95 | 0d |

## Version 2 (saved 2013-02-28, file Views.mpp)

Last finish stays 2013-09-25. Complete tasks 0 → 4.

Changed:

| ID | Task | Start | Finish | Duration | Complete | Total float | Predecessors |
| --- | --- | --- | --- | --- | --- | --- | --- |
| 1 | **Planning Move** |  |  |  | 9% → 68% |  |  |
| 2 | **Document requirements** | 2013-01-07 A | 2013-02-14 → 2013-02-28 (+14d) | 29d → 38d | 0% → 97% | 1.5d → 149d |  |
| 3 | Identify physical requirements | 2013-01-07 A | 2013-02-13 → 2013-02-14 A (+1d) |  | 0% → 100% | 1.5d → none |  |
| 4 | Draft the budget | 2013-01-07 → 2013-02-14 A (+38d) | 2013-01-18 → 2013-02-27 A (+40d) |  | 0% → 100% | 47d → none | none → 3FS-2.5% |
| 5 | Review requirements and budget | 2013-02-14 → 2013-02-28 (+14d) | 2013-02-14 → 2013-02-28 (+14d) |  |  | 159d → 149d | 4, 3 → 4 |
| 6 | **Choose new location** |  |  |  | 11% → 68% |  |  |
| 12 | **Evaluate lease sites** | 2013-02-14 A → 2013-02-17 A (+3d) |  | 44d → 42d | 11% → 68% |  |  |
| 13 | Identify potential sites | 2013-02-14 → 2013-02-17 A (+3d) | 2013-03-13 → 2013-03-15 A (+2d) |  | 0% → 100% | 1.5d → none |  |
| 14 | Identify tenant improvements | 2013-03-14 → 2013-03-15 A (+1d) | 2013-03-25 → 2013-03-26 A (+1d) |  | 0% → 100% | 1.5d → none |  |
| 88 | **Pre-move tasks** |  | 2013-09-09 → 2013-09-05 (-4d) | 6d → 4d |  | 12d → 14d |  |
| 89 | Install phone system |  | 2013-09-09 → 2013-09-05 (-4d) | 6d → 4d |  | 12d → 14d |  |

## Version 3 (saved 2013-03-01, file TwoViews.mpp)

Last finish stays 2013-09-25. Complete tasks 4 → 0.

Changed:

| ID | Task | Start | Finish | Duration | Complete | Total float | Other |
| --- | --- | --- | --- | --- | --- | --- | --- |
| 1 | **Planning Move** |  |  |  | 68% → 9% |  |  |
| 2 | **Document requirements** | 2013-01-07 A → 2013-01-07 | 2013-02-28 → 2013-02-19 (-9d) | 38d → 32d | 97% → 0% | 149d → 2d |  |
| 3 | Identify physical requirements | 2013-01-07 A → 2013-01-07 | 2013-02-14 A → 2013-02-13 (-1d) |  | 100% → 0% | none → 2d |  |
| 4 | Draft the budget | 2013-02-14 A → 2013-02-05 (-9d) | 2013-02-27 A → 2013-02-18 (-9d) |  | 100% → 0% | none → 26d |  |
| 5 | Review requirements and budget | 2013-02-28 → 2013-02-19 (-9d) | 2013-02-28 → 2013-02-19 (-9d) |  |  | 149d → 156d | constraint none → start no earlier than 2013-02-15 |
| 6 | **Choose new location** |  |  |  | 68% → 11% |  |  |
| 12 | **Evaluate lease sites** | 2013-02-17 A → 2013-02-14 A (-3d) |  | 42d → 44d | 68% → 11% |  |  |
| 13 | Identify potential sites | 2013-02-17 A → 2013-02-14 (-3d) | 2013-03-15 A → 2013-03-13 (-2d) |  | 100% → 0% | none → 2d |  |
| 14 | Identify tenant improvements | 2013-03-15 A → 2013-03-14 (-1d) | 2013-03-26 A → 2013-03-25 (-1d) |  | 100% → 0% | none → 2d |  |

## Version 4 (saved 2013-03-01, file TaskText.mpp)

Last finish stays 2013-09-25.

Changed:

| ID | Task | Start | Finish | Duration | Total float | Predecessors | Other |
| --- | --- | --- | --- | --- | --- | --- | --- |
| 2 | **Document requirements** |  | 2013-02-19 → 2013-02-14 (-5d) | 32d → 29d | 2d → 1.5d |  |  |
| 4 | Draft the budget | 2013-02-05 → 2013-01-07 (-29d) | 2013-02-18 → 2013-01-18 (-31d) |  | 26d → 47d | 3FS-2.5% → none |  |
| 5 | Review requirements and budget | 2013-02-19 → 2013-02-14 (-5d) | 2013-02-19 → 2013-02-14 (-5d) |  | 156d → 159d | 4 → 4, 3 | constraint start no earlier than 2013-02-15 → none |
| 88 | **Pre-move tasks** |  | 2013-09-05 → 2013-09-09 (+4d) | 4d → 6d | 14d → 12d |  |  |
| 89 | Install phone system |  | 2013-09-05 → 2013-09-09 (+4d) | 4d → 6d | 14d → 12d |  |  |
| 95 | Open house |  |  | 1d → 4h | 8d → 8.5d |  | was named Schedule open house for clients |

## Version 5 (saved 2013-03-01, file Sorting.mpp)

Last finish stays 2013-09-25. Complete tasks 0 → 4.

Changed:

| ID | Task | Start | Finish | Duration | Complete | Total float | Predecessors | Other |
| --- | --- | --- | --- | --- | --- | --- | --- | --- |
| 1 | **Planning Move** |  |  |  | 9% → 68% |  |  |  |
| 2 | **Document requirements** | 2013-01-07 A | 2013-02-14 → 2013-02-28 (+14d) | 29d → 38d | 0% → 97% | 1.5d → 149d |  |  |
| 3 | Identify physical requirements | 2013-01-07 A | 2013-02-13 → 2013-02-14 A (+1d) |  | 0% → 100% | 1.5d → none |  |  |
| 4 | Draft the budget | 2013-01-07 → 2013-02-14 A (+38d) | 2013-01-18 → 2013-02-27 A (+40d) |  | 0% → 100% | 47d → none | none → 3FS-2.5% |  |
| 5 | Review requirements and budget | 2013-02-14 → 2013-02-28 (+14d) | 2013-02-14 → 2013-02-28 (+14d) |  |  | 159d → 149d | 4, 3 → 4 |  |
| 6 | **Choose new location** |  |  |  | 11% → 68% |  |  |  |
| 12 | **Evaluate lease sites** | 2013-02-14 A → 2013-02-17 A (+3d) |  | 44d → 42d | 11% → 68% |  |  |  |
| 13 | Identify potential sites | 2013-02-14 → 2013-02-17 A (+3d) | 2013-03-13 → 2013-03-15 A (+2d) |  | 0% → 100% | 1.5d → none |  |  |
| 14 | Identify tenant improvements | 2013-03-14 → 2013-03-15 A (+1d) | 2013-03-25 → 2013-03-26 A (+1d) |  | 0% → 100% | 1.5d → none |  |  |
| 88 | **Pre-move tasks** |  | 2013-09-09 → 2013-09-05 (-4d) | 6d → 4d |  | 12d → 14d |  |  |
| 89 | Install phone system |  | 2013-09-09 → 2013-09-05 (-4d) | 6d → 4d |  | 12d → 14d |  |  |
| 95 | Schedule open house for clients |  |  | 4h → 1d |  | 8.5d → 8d |  | was named Open house |

## Version 6 (saved 2015-10-21, file Timeline.mpp)

Last finish stays 2013-09-25. Complete tasks 4 → 0.

Changed:

| ID | Task | Start | Finish | Duration | Complete | Total float | Other |
| --- | --- | --- | --- | --- | --- | --- | --- |
| 1 | **Planning Move** |  |  |  | 68% → 9% |  |  |
| 2 | **Document requirements** | 2013-01-07 A → 2013-01-07 | 2013-02-28 → 2013-02-19 (-9d) | 38d → 32d | 97% → 0% | 149d → 1.5d |  |
| 3 | Identify physical requirements | 2013-01-07 A → 2013-01-07 | 2013-02-14 A → 2013-02-13 (-1d) |  | 100% → 0% | none → 2d |  |
| 4 | Draft the budget | 2013-02-14 A → 2013-02-05 (-9d) | 2013-02-27 A → 2013-02-18 (-9d) |  | 100% → 0% | none → 26d |  |
| 5 | Review requirements and budget | 2013-02-28 → 2013-02-19 (-9d) | 2013-02-28 → 2013-02-19 (-9d) |  |  | 149d → 156d | constraint none → start no earlier than 2013-02-15 |
| 6 | **Choose new location** |  |  |  | 68% → 11% |  |  |
| 12 | **Evaluate lease sites** | 2013-02-17 A → 2013-02-14 A (-3d) |  | 42d → 44d | 68% → 11% |  |  |
| 13 | Identify potential sites | 2013-02-17 A → 2013-02-14 (-3d) | 2013-03-15 A → 2013-03-13 (-2d) |  | 100% → 0% | none → 2d |  |
| 14 | Identify tenant improvements | 2013-03-15 A → 2013-03-14 (-1d) | 2013-03-26 A → 2013-03-25 (-1d) |  | 100% → 0% | none → 2d |  |
| 95 | Open house | 2013-09-13 → 2013-09-20 (+7d) | 2013-09-13 → 2013-09-20 (+7d) |  |  | 8d → 3d | was named Schedule open house for clients; constraint none → start no earlier than 2013-09-20 |
