# Office Move

How a schedule from MS Project changed from version to version. A marks actual dates.

## Version 1 (data date 2014-09-12, saved 2013-03-09, file Prebaseline.mpp)

| ID | WBS | Task | Duration | Start | Finish | Predecessors | Total float | Constraint |
| --- | --- | --- | --- | --- | --- | --- | --- | --- |
| 1 | 1 | **Planning Move** | 84d | 2014-06-02 | 2014-09-25 |  |  |  |
| 2 | 1.1 | **Document requirements** | 31.5d | 2014-06-02 | 2014-07-15 |  | -1d |  |
| 3 |  | Identify physical requirements | 20d | 2014-06-02 | 2014-06-27 |  | -1d |  |
| 4 |  | Draft the budget | 10d | 2014-06-23 | 2014-07-04 | 3FS-2.5% | -1d |  |
| 5 | 1.1.3 | **Mgt meeting** | 6.5d | 2014-07-07 | 2014-07-15 |  | 52.5d |  |
| 6 |  | Prepare mgt presentation | 3d | 2014-07-07 | 2014-07-09 | 4 | 52.5d |  |
| 7 |  | Prepare materials | 3d | 2014-07-10 | 2014-07-14 | 6 | 52.5d |  |
| 8 |  | Present to mgt | 0.5d | 2014-07-15 | 2014-07-15 | 7 | 52.5d |  |
| 9 | 1.2 | **Choose new location** | 50d | 2014-07-07 | 2014-09-12 |  | -1d |  |
| 10 | 1.2.1 | **Evaluate lease sites** | 50d | 2014-07-07 | 2014-09-12 |  | -1d |  |
| 11 |  | Identify potential sites | 18d | 2014-07-07 | 2014-07-30 | 4 | -1d |  |
| 12 |  | Identify tenant improvements | 7d | 2014-07-31 | 2014-08-08 | 11 | -1d |  |
| 13 |  | Select site | 10d | 2014-08-11 | 2014-08-22 | 12, 4 | 4.5d |  |
| 14 |  | Finalize lease | 10d | 2014-08-25 | 2014-09-12 | 13 | 4.5d |  |
| 15 | 1.3 | **Identify costs** | 42d | 2014-07-31 | 2014-09-26 |  | -1d |  |
| 16 |  | Estimate costs for tenant improvements | 10d | 2014-08-11 | 2014-08-22 | 12 | 24d |  |
| 17 |  | Identify addl costs (furniture, equipment) | 20d | 2014-07-31 | 2014-09-19 | 11 | -0.5d |  |
| 18 |  | Inventory office | 25d | 2014-08-11 | 2014-09-26 | 12 | -1d |  |
| 19 |  | Planning complete | 0d | 2014-09-19 | 2014-09-19 | 11, 13, 14, 12, 17 | -0.5d |  |
| 20 |  | Hire contractors for tenant improvements | 5d | 2014-08-25 | 2014-08-29 | 16 | 217.5d |  |
| 21 | 2 | **Prep phone system** | 225d | 2014-09-22 | 2015-07-31 | 19 | 13.5d |  |
| 22 |  | Review phone system requirements | 3d | 2014-09-22 | 2014-09-24 |  | 229.5d |  |
| 23 |  | Order new phone numbers | 1d | 2014-09-25 | 2014-09-25 | 22 | 229.5d |  |
| 24 |  | Order long-distance service | 1d | 2014-09-26 | 2014-09-26 | 23 | 229.5d |  |
| 25 |  | Phone lines ordered | 0d | 2014-09-26 | 2014-09-26 | 24 | 229.5d |  |
| 26 | 2.5 | **Design and construction** | 81.75d | 2014-09-22 | 2015-01-13 |  | 147.75d |  |
| 27 | 2.5.1 | **Design space** | 54.75d | 2014-09-22 | 2014-12-05 |  | 147.75d |  |
| 28 |  | Design office space | 13.75d | 2014-09-22 | 2014-10-09 | 19 | 147.75d |  |
| 29 |  | Prepare drawings | 5d | 2014-10-09 | 2014-10-16 | 28 | 147.75d |  |
| 30 |  | Design IT infrastructure | 10d | 2014-10-16 | 2014-10-30 | 29 | 147.75d |  |
| 31 |  | Obtain final budget estimates | 10d | 2014-10-30 | 2014-11-13 | 30 | 147.75d |  |
| 32 |  | Sign off on plans | 1d | 2014-11-13 | 2014-11-14 | 31 | 147.75d |  |
| 33 |  | Obtain permits | 3w | 2014-11-14 | 2014-12-05 | 32 | 147.75d |  |
| 34 | 2.5.2 | **Construction** | 20d | 2014-12-05 | 2015-01-02 | 33 | 147.75d |  |
| 35 |  | Demolish walls | 5d | 2014-12-05 | 2014-12-12 | 20 | 147.75d |  |
| 36 |  | Construct new walls | 15d | 2014-12-12 | 2015-01-02 | 35 | 147.75d |  |
| 37 |  | Elec, mech, HVAC | 15d | 2014-12-12 | 2015-01-02 | 35 | 147.75d |  |
| 38 | 2.5.3 | **Walkthrough and repair** | 7d | 2015-01-02 | 2015-01-13 | 37, 36 | 147.75d |  |
| 39 |  | Repair issues | 5d | 2015-01-02 | 2015-01-09 |  | 147.75d |  |
| 40 |  | Schedule open house for employees | 1d | 2015-01-02 | 2015-01-05 |  | 162.75d |  |
| 41 |  | Clean new office | 1d | 2015-01-09 | 2015-01-12 | 39 | 147.75d |  |
| 42 |  | Construction complete | 0d | 2015-01-12 | 2015-01-12 | 41 | 156.75d |  |
| 43 |  | Open house | 1d | 2015-01-12 | 2015-01-13 | 42 | 156.75d |  |
| 44 | 2.6 | **Set up services** | 10d | 2014-11-17 | 2014-11-28 | 19FS+2mo | -0.5d |  |
| 45 |  | Order change of address labels | 1d | 2014-11-17 | 2014-11-17 |  | 8.5d |  |
| 46 |  | Obtain estimates from signage companies | 7d | 2014-11-17 | 2014-11-25 |  | -0.5d |  |
| 47 |  | Order signage | 3d | 2014-11-26 | 2014-11-28 | 46 | -0.5d |  |
| 48 |  | Arrange external maintenance | 5d | 2014-11-17 | 2014-11-21 |  | 4.5d |  |
| 49 |  | Arrange for trash disposal | 1d | 2014-11-17 | 2014-11-17 |  | 8.5d |  |
| 50 |  | Arrange for cleaning service | 1d | 2014-11-17 | 2014-11-17 |  | 8.5d |  |
| 51 |  | Arrange for recycling | 1d | 2014-11-17 | 2014-11-17 |  | 8.5d |  |
| 52 |  | Order security system | 2d | 2014-11-17 | 2014-11-18 |  | 7.5d |  |
| 53 |  | Send change of address to vendors, customers, supscriptions | 1d | 2014-11-17 | 2014-11-17 |  | 8.5d |  |
| 54 |  | Notify all leasers of equipment move | 1d | 2014-11-17 | 2014-11-17 |  | 8.5d |  |
| 55 |  | Order checks with new address | 1d | 2014-11-17 | 2014-11-17 |  | 8.5d |  |
| 56 |  | Schedule disconnection of utilities | 1d | 2014-11-17 | 2014-11-17 |  | 8.5d |  |
| 57 |  | Service setup complete | 0d | 2014-11-28 | 2015-07-31 | 44 | -0.5d | start no earlier than 2010-09-20 |
| 58 | 2.8 | **Create office assignment layout** | 8.12d | 2014-10-09 | 2014-10-21 |  | 202.62d |  |
| 59 |  | Assign office spaces | 5d | 2014-10-09 | 2014-10-16 | 28 | 202.62d |  |
| 60 |  | Assign new phone numbers, extensions | 2d | 2014-10-16 | 2014-10-20 | 59 | 202.62d |  |
| 61 |  | Create new office extension directory | 1d | 2014-10-20 | 2014-10-21 | 60 | 202.62d |  |
| 62 |  | Create new office layout map | 1d | 2014-10-16 | 2014-10-17 | 59 | 204.75d |  |
| 63 |  | Create new fax cover sheet | 0.12d | 2014-10-21 | 2014-10-21 | 61 | 202.62d |  |
| 64 |  | Office plan complete | 0d | 2014-10-21 | 2014-10-21 | 62, 61, 63 | 202.62d |  |
| 65 | 2.9 | **Order new stationery** | 1.5d | 2014-10-21 | 2014-10-23 | 64 | 205.12d |  |
| 66 |  | Order new letterhead and envelopes | 0.25d | 2014-10-21 | 2014-10-22 |  | 205.12d |  |
| 67 |  | Order new business cards | 0.25d | 2014-10-22 | 2014-10-22 | 66 | 205.12d |  |
| 68 |  | Order new business forms | 0.25d | 2014-10-22 | 2014-10-22 | 67 | 205.12d |  |
| 69 |  | Get shipping labels | 0.25d | 2014-10-22 | 2014-10-22 | 68 | 205.12d |  |
| 70 |  | Create map to location | 0.25d | 2014-10-22 | 2014-10-23 | 69 | 205.12d |  |

| ID | WBS | Task | Duration | Start | Finish | Predecessors | Total float |
| --- | --- | --- | --- | --- | --- | --- | --- |
| 71 |  | Notify post office of change of address | 0.25d | 2014-10-23 | 2014-10-23 | 70 | 205.12d |
| 72 |  | Update company website with new information | 1d | 2014-10-21 | 2014-10-22 |  | 205.62d |
| 73 | 2.10 | **Hire movers** | 13d | 2014-10-20 | 2014-11-05 | 19FS+1mo | 191.5d |
| 74 |  | Obtain estimates from moving companies | 12d | 2014-10-20 | 2014-11-04 |  | 191.5d |
| 75 |  | Choose moving company | 1d | 2014-11-05 | 2014-11-05 | 74 | 191.5d |
| 76 | 2.11 | **Obtain insurance** | 13d | 2014-09-22 | 2014-10-08 |  | 211.5d |
| 77 |  | Appraise assets | 3d | 2014-09-22 | 2014-09-24 |  | 211.5d |
| 78 |  | Obtain quotes for insurance | 1d | 2014-09-25 | 2014-10-07 | 77 | 211.5d |
| 79 |  | Purchase insurance | 1d | 2014-10-08 | 2014-10-08 | 78 | 211.5d |
| 80 |  | Construction and prep complete | 0d | 2015-07-31 | 2015-07-31 | 57, 75, 79, 58 | -0.5d |
| 81 | 4 | **Move** | 4d | 2015-08-03 | 2015-08-06 | 80 | -0.5d |
| 82 |  | Distribute new keys, cards | 1d | 2015-08-03 | 2015-08-03 |  | 2.5d |
| 83 |  | Pack and move | 4d | 2015-08-03 | 2015-08-06 | 18 | -0.5d |
| 84 |  | Move complete | 0d | 2015-08-06 | 2015-08-06 | 60, 82, 66, 67, 68, 39, 41, 71, 72, 56, 83, 18 | -0.5d |
| 85 | 5 | **Pre-move tasks** | 4d | 2015-08-03 | 2015-08-06 | 81SS | 9.5d |
| 86 |  | Install phone system | 4d | 2015-08-03 | 2015-08-06 | 25 | 9.5d |
| 87 | 6 | **Post-Move** | 10d | 2015-08-07 | 2015-08-20 | 84 | -0.5d |
| 88 |  | Check for damage and missing items | 10d | 2015-08-07 | 2015-08-20 |  | -0.5d |
| 89 |  | Schedule phone training | 1d | 2015-08-07 | 2015-08-07 |  | 8.5d |
| 90 |  | Schedule security training | 1d | 2015-08-07 | 2015-08-07 |  | 8.5d |
| 91 |  | Schedule fire drill | 1d | 2015-08-07 | 2015-08-07 |  | 8.5d |
| 92 |  | Schedule open house for clients | 1d | 2015-08-07 | 2015-08-07 |  | 8.5d |
| 93 |  | Office move complete | 0d | 2015-08-20 | 2015-08-20 | 84, 88, 89, 90, 91, 92 | -0.5d |

## Version 2 (data date 2014-09-12, saved 2013-03-09, file EditBaseline.mpp)

Last finish stays 2015-08-20.

Changed:

| ID | Task | Other |
| --- | --- | --- |
| 1 | **Planning Move** | baseline start none → 2014-06-02; baseline finish none → 2014-09-25 |
| 2 | **Document requirements** | baseline start none → 2014-06-02; baseline finish none → 2014-07-15 |
| 3 | Identify physical requirements | baseline start none → 2014-06-02; baseline finish none → 2014-06-27 |
| 4 | Draft the budget | baseline start none → 2014-06-23; baseline finish none → 2014-07-04 |
| 5 | **Mgt meeting** | baseline start none → 2014-07-07; baseline finish none → 2014-07-15 |
| 6 | Prepare mgt presentation | baseline start none → 2014-07-07; baseline finish none → 2014-07-09 |
| 7 | Prepare materials | baseline start none → 2014-07-10; baseline finish none → 2014-07-14 |
| 8 | Present to mgt | baseline start none → 2014-07-15; baseline finish none → 2014-07-15 |
| 9 | **Choose new location** | baseline start none → 2014-07-07; baseline finish none → 2014-09-12 |
| 10 | **Evaluate lease sites** | baseline start none → 2014-07-07; baseline finish none → 2014-09-12 |
| 11 | Identify potential sites | baseline start none → 2014-07-07; baseline finish none → 2014-07-30 |
| 12 | Identify tenant improvements | baseline start none → 2014-07-31; baseline finish none → 2014-08-08 |
| 13 | Select site | baseline start none → 2014-08-11; baseline finish none → 2014-08-22 |
| 14 | Finalize lease | baseline start none → 2014-08-25; baseline finish none → 2014-09-12 |
| 15 | **Identify costs** | baseline start none → 2014-07-31; baseline finish none → 2014-09-26 |
| 16 | Estimate costs for tenant improvements | baseline start none → 2014-08-11; baseline finish none → 2014-08-22 |
| 17 | Identify addl costs (furniture, equipment) | baseline start none → 2014-07-31; baseline finish none → 2014-09-19 |
| 18 | Inventory office | baseline start none → 2014-08-11; baseline finish none → 2014-09-26 |
| 19 | Planning complete | baseline start none → 2014-09-19; baseline finish none → 2014-09-19 |
| 20 | Hire contractors for tenant improvements | baseline start none → 2014-08-25; baseline finish none → 2014-08-29 |
| 21 | **Prep phone system** | baseline start none → 2014-09-22; baseline finish none → 2015-07-31 |
| 22 | Review phone system requirements | baseline start none → 2014-09-22; baseline finish none → 2014-09-24 |
| 23 | Order new phone numbers | baseline start none → 2014-09-25; baseline finish none → 2014-09-25 |
| 24 | Order long-distance service | baseline start none → 2014-09-26; baseline finish none → 2014-09-26 |
| 25 | Phone lines ordered | baseline start none → 2014-09-26; baseline finish none → 2014-09-26 |
| 26 | **Design and construction** | baseline start none → 2014-09-22; baseline finish none → 2015-01-13 |
| 27 | **Design space** | baseline start none → 2014-09-22; baseline finish none → 2014-12-05 |
| 28 | Design office space | baseline start none → 2014-09-22; baseline finish none → 2014-10-09 |
| 29 | Prepare drawings | baseline start none → 2014-10-09; baseline finish none → 2014-10-16 |
| 30 | Design IT infrastructure | baseline start none → 2014-10-16; baseline finish none → 2014-10-30 |
| 31 | Obtain final budget estimates | baseline start none → 2014-10-30; baseline finish none → 2014-11-13 |
| 32 | Sign off on plans | baseline start none → 2014-11-13; baseline finish none → 2014-11-14 |
| 33 | Obtain permits | baseline start none → 2014-11-14; baseline finish none → 2014-12-05 |
| 34 | **Construction** | baseline start none → 2014-12-05; baseline finish none → 2015-01-02 |
| 35 | Demolish walls | baseline start none → 2014-12-05; baseline finish none → 2014-12-12 |
| 36 | Construct new walls | baseline start none → 2014-12-12; baseline finish none → 2015-01-02 |
| 37 | Elec, mech, HVAC | baseline start none → 2014-12-12; baseline finish none → 2015-01-02 |
| 38 | **Walkthrough and repair** | baseline start none → 2015-01-02; baseline finish none → 2015-01-13 |
| 39 | Repair issues | baseline start none → 2015-01-02; baseline finish none → 2015-01-09 |
| 41 | Clean new office | baseline start none → 2015-01-09; baseline finish none → 2015-01-12 |
| 42 | Construction complete | baseline start none → 2015-01-12; baseline finish none → 2015-01-12 |
| 43 | Open house | baseline start none → 2015-01-12; baseline finish none → 2015-01-13 |
| 44 | **Set up services** | baseline start none → 2014-11-17; baseline finish none → 2014-11-28 |
| 57 | Service setup complete | baseline start none → 2014-11-28; baseline finish none → 2015-07-31 |
| 58 | **Create office assignment layout** | baseline start none → 2014-10-09; baseline finish none → 2014-10-21 |
| 59 | Assign office spaces | baseline start none → 2014-10-09; baseline finish none → 2014-10-16 |
| 60 | Assign new phone numbers, extensions | baseline start none → 2014-10-16; baseline finish none → 2014-10-20 |
| 61 | Create new office extension directory | baseline start none → 2014-10-20; baseline finish none → 2014-10-21 |
| 62 | Create new office layout map | baseline start none → 2014-10-16; baseline finish none → 2014-10-17 |
| 63 | Create new fax cover sheet | baseline start none → 2014-10-21; baseline finish none → 2014-10-21 |
| 64 | Office plan complete | baseline start none → 2014-10-21; baseline finish none → 2014-10-21 |
| 65 | **Order new stationery** | baseline start none → 2014-10-21; baseline finish none → 2014-10-23 |
| 66 | Order new letterhead and envelopes | baseline start none → 2014-10-21; baseline finish none → 2014-10-22 |
| 67 | Order new business cards | baseline start none → 2014-10-22; baseline finish none → 2014-10-22 |
| 68 | Order new business forms | baseline start none → 2014-10-22; baseline finish none → 2014-10-22 |
| 69 | Get shipping labels | baseline start none → 2014-10-22; baseline finish none → 2014-10-22 |
| 70 | Create map to location | baseline start none → 2014-10-22; baseline finish none → 2014-10-23 |
| 71 | Notify post office of change of address | baseline start none → 2014-10-23; baseline finish none → 2014-10-23 |
| 72 | Update company website with new information | baseline start none → 2014-10-21; baseline finish none → 2014-10-22 |
| 73 | **Hire movers** | baseline start none → 2014-10-20; baseline finish none → 2014-11-05 |
| 74 | Obtain estimates from moving companies | baseline start none → 2014-10-20; baseline finish none → 2014-11-04 |
| 75 | Choose moving company | baseline start none → 2014-11-05; baseline finish none → 2014-11-05 |
| 77 | Appraise assets | baseline start none → 2014-09-22; baseline finish none → 2014-09-24 |
| 78 | Obtain quotes for insurance | baseline start none → 2014-09-25; baseline finish none → 2014-10-07 |
| 79 | Purchase insurance | baseline start none → 2014-10-08; baseline finish none → 2014-10-08 |
| 80 | Construction and prep complete | baseline start none → 2015-07-31; baseline finish none → 2015-07-31 |
| 81 | **Move** | baseline start none → 2015-08-03; baseline finish none → 2015-08-06 |
| 82 | Distribute new keys, cards | baseline start none → 2015-08-03; baseline finish none → 2015-08-03 |
| 83 | Pack and move | baseline start none → 2015-08-03; baseline finish none → 2015-08-06 |
| 84 | Move complete | baseline start none → 2015-08-06; baseline finish none → 2015-08-06 |

| ID | Task | Other |
| --- | --- | --- |
| 85 | **Pre-move tasks** | baseline start none → 2015-08-03; baseline finish none → 2015-08-06 |
| 86 | Install phone system | baseline start none → 2015-08-03; baseline finish none → 2015-08-06 |
| 87 | **Post-Move** | baseline start none → 2015-08-07; baseline finish none → 2015-08-20 |
| 88 | Check for damage and missing items | baseline start none → 2015-08-07; baseline finish none → 2015-08-20 |
| 89 | Schedule phone training | baseline start none → 2015-08-07; baseline finish none → 2015-08-07 |
| 90 | Schedule security training | baseline start none → 2015-08-07; baseline finish none → 2015-08-07 |
| 91 | Schedule fire drill | baseline start none → 2015-08-07; baseline finish none → 2015-08-07 |
| 92 | Schedule open house for clients | baseline start none → 2015-08-07; baseline finish none → 2015-08-07 |
| 93 | Office move complete | baseline start none → 2015-08-20; baseline finish none → 2015-08-20 |

## Version 3 (data date 2014-09-12, saved 2013-03-12, file BaselineActual.mpp)

Last finish 2015-08-20 → 2015-08-18 (-2d). Complete tasks 0 → 10.

Changed:

| ID | Task | Start | Finish | Duration | Complete | Total float | Other |
| --- | --- | --- | --- | --- | --- | --- | --- |
| 1 | **Planning Move** | 2014-06-02 A | 2014-09-25 → 2014-10-08 (+13d) | 84d → 92.5d | 0% → 79% | none → 210.5d | baseline finish 2014-09-25 → 2014-09-26 |
| 2 | **Document requirements** | 2014-06-02 A | 2014-07-15 → 2014-07-11 A (-4d) | 31.5d → 29.5d | 0% → 100% | -1d → none |  |
| 3 | Identify physical requirements | 2014-06-02 A | 2014-06-27 → 2014-06-24 A (-3d) | 20d → 17d | 0% → 100% | -1d → none |  |
| 4 | Draft the budget | 2014-06-23 → 2014-06-18 A (-5d) | 2014-07-04 → 2014-06-30 A (-4d) | 10d → 9d | 0% → 100% | -1d → none |  |
| 5 | **Mgt meeting** | 2014-07-07 → 2014-07-01 A (-6d) | 2014-07-15 → 2014-07-11 A (-4d) | 6.5d → 8.5d | 0% → 100% | 52.5d → none |  |
| 6 | Prepare mgt presentation | 2014-07-07 → 2014-07-01 A (-6d) | 2014-07-09 → 2014-07-03 A (-6d) |  | 0% → 100% | 52.5d → none |  |
| 7 | Prepare materials | 2014-07-10 → 2014-07-07 A (-3d) | 2014-07-14 → 2014-07-10 A (-4d) | 3d → 4d | 0% → 100% | 52.5d → none |  |
| 8 | Present to mgt | 2014-07-15 → 2014-07-11 A (-4d) | 2014-07-15 → 2014-07-11 A (-4d) | 0.5d → 4h | 0% → 100% | 52.5d → none |  |
| 9 | **Choose new location** | 2014-07-07 → 2014-07-14 A (+7d) | 2014-09-12 → 2014-09-17 (+5d) | 50d → 48d | 0% → 93% | -1d → 0d |  |
| 10 | **Evaluate lease sites** | 2014-07-07 → 2014-07-14 A (+7d) | 2014-09-12 → 2014-09-17 (+5d) | 50d → 48d | 0% → 93% | -1d → 0d |  |
| 11 | Identify potential sites | 2014-07-07 → 2014-07-14 A (+7d) | 2014-07-30 → 2014-08-01 A (+2d) | 18d → 15d | 0% → 100% | -1d → none |  |
| 12 | Identify tenant improvements | 2014-07-31 → 2014-08-04 A (+4d) | 2014-08-08 → 2014-08-15 A (+7d) | 7d → 10d | 0% → 100% | -1d → none |  |
| 13 | Select site | 2014-08-11 → 2014-08-18 A (+7d) | 2014-08-22 → 2014-08-27 A (+5d) | 10d → 8d | 0% → 100% | 4.5d → none |  |
| 14 | Finalize lease | 2014-08-25 → 2014-08-28 A (+3d) | 2014-09-12 → 2014-09-17 (+5d) |  | 0% → 70% | 4.5d → 0d |  |
| 15 | **Identify costs** | 2014-07-31 → 2014-08-04 A (+4d) | 2014-09-26 → 2014-10-08 (+12d) | 42d → 47.5d | 0% → 51% | -1d → 210.5d |  |
| 16 | Estimate costs for tenant improvements | 2014-08-11 → 2014-08-18 A (+7d) | 2014-08-22 A | 10d → 5d | 0% → 100% | 24d → none |  |
| 17 | Identify addl costs (furniture, equipment) | 2014-07-31 → 2014-08-04 A (+4d) | 2014-09-19 → 2014-08-29 (-21d) |  | 0% → 65% | -0.5d → 13d |  |
| 18 | Inventory office | 2014-08-11 → 2014-08-20 A (+9d) | 2014-09-26 → 2014-10-08 (+12d) |  | 0% → 30% | -1d → 214.5d |  |
| 19 | Planning complete | 2014-09-19 → 2014-09-17 (-2d) | 2014-09-19 → 2014-09-17 (-2d) |  |  | -0.5d → 0d |  |
| 20 | Hire contractors for tenant improvements | 2014-08-25 A | 2014-08-29 A |  | 0% → 100% | 217.5d → none |  |
| 21 | **Prep phone system** | 2014-09-22 → 2014-09-18 (-4d) | 2015-07-31 → 2015-07-29 (-2d) |  |  | 13.5d → 14d |  |
| 22 | Review phone system requirements | 2014-09-22 → 2014-09-18 (-4d) | 2014-09-24 → 2014-09-22 (-2d) |  |  | 229.5d → 230d |  |
| 23 | Order new phone numbers | 2014-09-25 → 2014-09-23 (-2d) | 2014-09-25 → 2014-09-23 (-2d) |  |  | 229.5d → 230d |  |
| 24 | Order long-distance service | 2014-09-26 → 2014-09-24 (-2d) | 2014-09-26 → 2014-09-24 (-2d) |  |  | 229.5d → 230d |  |
| 25 | Phone lines ordered | 2014-09-26 → 2014-09-24 (-2d) | 2014-09-26 → 2014-09-24 (-2d) |  |  | 229.5d → 230d |  |
| 26 | **Design and construction** | 2014-09-22 → 2014-09-18 (-4d) | 2015-01-13 → 2015-01-09 (-4d) |  |  | 147.75d → 148.25d |  |
| 27 | **Design space** | 2014-09-22 → 2014-09-18 (-4d) | 2014-12-05 → 2014-12-03 (-2d) |  |  | 147.75d → 148.25d |  |
| 28 | Design office space | 2014-09-22 → 2014-09-18 (-4d) | 2014-10-09 → 2014-10-07 (-2d) |  |  | 147.75d → 148.25d |  |
| 29 | Prepare drawings | 2014-10-09 → 2014-10-07 (-2d) | 2014-10-16 → 2014-10-14 (-2d) |  |  | 147.75d → 148.25d |  |
| 30 | Design IT infrastructure | 2014-10-16 → 2014-10-14 (-2d) | 2014-10-30 → 2014-10-28 (-2d) |  |  | 147.75d → 148.25d |  |
| 31 | Obtain final budget estimates | 2014-10-30 → 2014-10-28 (-2d) | 2014-11-13 → 2014-11-11 (-2d) |  |  | 147.75d → 148.25d |  |
| 32 | Sign off on plans | 2014-11-13 → 2014-11-11 (-2d) | 2014-11-14 → 2014-11-12 (-2d) |  |  | 147.75d → 148.25d |  |
| 33 | Obtain permits | 2014-11-14 → 2014-11-12 (-2d) | 2014-12-05 → 2014-12-03 (-2d) |  |  | 147.75d → 148.25d |  |
| 34 | **Construction** | 2014-12-05 → 2014-12-03 (-2d) | 2015-01-02 → 2014-12-31 (-2d) |  |  | 147.75d → 148.25d |  |
| 35 | Demolish walls | 2014-12-05 → 2014-12-03 (-2d) | 2014-12-12 → 2014-12-10 (-2d) |  |  | 147.75d → 148.25d |  |
| 36 | Construct new walls | 2014-12-12 → 2014-12-10 (-2d) | 2015-01-02 → 2014-12-31 (-2d) |  |  | 147.75d → 148.25d |  |
| 37 | Elec, mech, HVAC | 2014-12-12 → 2014-12-10 (-2d) | 2015-01-02 → 2014-12-31 (-2d) |  |  | 147.75d → 148.25d |  |
| 38 | **Walkthrough and repair** | 2015-01-02 → 2014-12-31 (-2d) | 2015-01-13 → 2015-01-09 (-4d) |  |  | 147.75d → 148.25d |  |
| 39 | Repair issues | 2015-01-02 → 2014-12-31 (-2d) | 2015-01-09 → 2015-01-07 (-2d) |  |  | 147.75d → 148.25d |  |
| 40 | Schedule open house for employees | 2015-01-02 → 2014-12-31 (-2d) | 2015-01-05 → 2015-01-01 (-4d) |  |  | 162.75d → 163.25d |  |
| 41 | Clean new office | 2015-01-09 → 2015-01-07 (-2d) | 2015-01-12 → 2015-01-08 (-4d) |  |  | 147.75d → 148.25d |  |
| 42 | Construction complete | 2015-01-12 → 2015-01-08 (-4d) | 2015-01-12 → 2015-01-08 (-4d) |  |  | 156.75d → 157.25d |  |
| 43 | Open house | 2015-01-12 → 2015-01-08 (-4d) | 2015-01-13 → 2015-01-09 (-4d) |  |  | 156.75d → 157.25d |  |
| 44 | **Set up services** | 2014-11-17 → 2014-11-13 (-4d) | 2014-11-28 → 2014-11-26 (-2d) |  |  | -0.5d → 0d |  |
| 45 | Order change of address labels | 2014-11-17 → 2014-11-13 (-4d) | 2014-11-17 → 2014-11-13 (-4d) |  |  | 8.5d → 9d |  |
| 46 | Obtain estimates from signage companies | 2014-11-17 → 2014-11-13 (-4d) | 2014-11-25 → 2014-11-21 (-4d) |  |  | -0.5d → 0d |  |
| 47 | Order signage | 2014-11-26 → 2014-11-24 (-2d) | 2014-11-28 → 2014-11-26 (-2d) |  |  | -0.5d → 0d |  |
| 48 | Arrange external maintenance | 2014-11-17 → 2014-11-13 (-4d) | 2014-11-21 → 2014-11-19 (-2d) |  |  | 4.5d → 5d |  |
| 49 | Arrange for trash disposal | 2014-11-17 → 2014-11-13 (-4d) | 2014-11-17 → 2014-11-13 (-4d) |  |  | 8.5d → 9d |  |
| 50 | Arrange for cleaning service | 2014-11-17 → 2014-11-13 (-4d) | 2014-11-17 → 2014-11-13 (-4d) |  |  | 8.5d → 9d |  |
| 51 | Arrange for recycling | 2014-11-17 → 2014-11-13 (-4d) | 2014-11-17 → 2014-11-13 (-4d) |  |  | 8.5d → 9d |  |
| 52 | Order security system | 2014-11-17 → 2014-11-13 (-4d) | 2014-11-18 → 2014-11-14 (-4d) |  |  | 7.5d → 8d |  |
| 53 | Send change of address to vendors, customers, supscriptions | 2014-11-17 → 2014-11-13 (-4d) | 2014-11-17 → 2014-11-13 (-4d) |  |  | 8.5d → 9d |  |
| 54 | Notify all leasers of equipment move | 2014-11-17 → 2014-11-13 (-4d) | 2014-11-17 → 2014-11-13 (-4d) |  |  | 8.5d → 9d |  |
| 55 | Order checks with new address | 2014-11-17 → 2014-11-13 (-4d) | 2014-11-17 → 2014-11-13 (-4d) |  |  | 8.5d → 9d |  |
| 56 | Schedule disconnection of utilities | 2014-11-17 → 2014-11-13 (-4d) | 2014-11-17 → 2014-11-13 (-4d) |  |  | 8.5d → 9d |  |
| 57 | Service setup complete | 2014-11-28 → 2014-11-26 (-2d) | 2015-07-31 → 2015-07-29 (-2d) |  |  | -0.5d → 0d |  |
| 58 | **Create office assignment layout** | 2014-10-09 → 2014-10-07 (-2d) | 2014-10-21 → 2014-10-17 (-4d) |  |  | 202.62d → 203.12d |  |
| 59 | Assign office spaces | 2014-10-09 → 2014-10-07 (-2d) | 2014-10-16 → 2014-10-14 (-2d) |  |  | 202.62d → 203.12d |  |
| 60 | Assign new phone numbers, extensions | 2014-10-16 → 2014-10-14 (-2d) | 2014-10-20 → 2014-10-16 (-4d) |  |  | 202.62d → 203.12d |  |
| 61 | Create new office extension directory | 2014-10-20 → 2014-10-16 (-4d) | 2014-10-21 → 2014-10-17 (-4d) |  |  | 202.62d → 203.12d |  |
| 62 | Create new office layout map | 2014-10-16 → 2014-10-14 (-2d) | 2014-10-17 → 2014-10-15 (-2d) |  |  | 204.75d → 205.25d |  |
| 63 | Create new fax cover sheet | 2014-10-21 → 2014-10-17 (-4d) | 2014-10-21 → 2014-10-17 (-4d) |  |  | 202.62d → 203.12d |  |
| 64 | Office plan complete | 2014-10-21 → 2014-10-17 (-4d) | 2014-10-21 → 2014-10-17 (-4d) |  |  | 202.62d → 203.12d |  |
| 65 | **Order new stationery** | 2014-10-21 → 2014-10-17 (-4d) | 2014-10-23 → 2014-10-21 (-2d) |  |  | 205.12d → 205.62d |  |
| 66 | Order new letterhead and envelopes | 2014-10-21 → 2014-10-17 (-4d) | 2014-10-22 → 2014-10-20 (-2d) |  |  | 205.12d → 205.62d |  |
| 67 | Order new business cards | 2014-10-22 → 2014-10-20 (-2d) | 2014-10-22 → 2014-10-20 (-2d) |  |  | 205.12d → 205.62d |  |
| 68 | Order new business forms | 2014-10-22 → 2014-10-20 (-2d) | 2014-10-22 → 2014-10-20 (-2d) |  |  | 205.12d → 205.62d |  |
| 69 | Get shipping labels | 2014-10-22 → 2014-10-20 (-2d) | 2014-10-22 → 2014-10-20 (-2d) |  |  | 205.12d → 205.62d |  |
| 70 | Create map to location | 2014-10-22 → 2014-10-20 (-2d) | 2014-10-23 → 2014-10-21 (-2d) |  |  | 205.12d → 205.62d |  |

| ID | Task | Start | Finish | Total float |
| --- | --- | --- | --- | --- |
| 71 | Notify post office of change of address | 2014-10-23 → 2014-10-21 (-2d) | 2014-10-23 → 2014-10-21 (-2d) | 205.12d → 205.62d |
| 72 | Update company website with new information | 2014-10-21 → 2014-10-17 (-4d) | 2014-10-22 → 2014-10-20 (-2d) | 205.62d → 206.12d |
| 73 | **Hire movers** | 2014-10-20 → 2014-10-16 (-4d) | 2014-11-05 → 2014-11-03 (-2d) | 191.5d → 192d |
| 74 | Obtain estimates from moving companies | 2014-10-20 → 2014-10-16 (-4d) | 2014-11-04 → 2014-10-31 (-4d) | 191.5d → 192d |
| 75 | Choose moving company | 2014-11-05 → 2014-11-03 (-2d) | 2014-11-05 → 2014-11-03 (-2d) | 191.5d → 192d |
| 76 | **Obtain insurance** | 2014-09-22 → 2014-09-18 (-4d) | 2014-10-08 → 2014-10-06 (-2d) | 211.5d → 212d |
| 77 | Appraise assets | 2014-09-22 → 2014-09-18 (-4d) | 2014-09-24 → 2014-09-22 (-2d) | 211.5d → 212d |
| 78 | Obtain quotes for insurance | 2014-09-25 → 2014-09-23 (-2d) | 2014-10-07 → 2014-10-03 (-4d) | 211.5d → 212d |
| 79 | Purchase insurance | 2014-10-08 → 2014-10-06 (-2d) | 2014-10-08 → 2014-10-06 (-2d) | 211.5d → 212d |
| 80 | Construction and prep complete | 2015-07-31 → 2015-07-29 (-2d) | 2015-07-31 → 2015-07-29 (-2d) | -0.5d → 0d |
| 81 | **Move** | 2015-08-03 → 2015-07-30 (-4d) | 2015-08-06 → 2015-08-04 (-2d) | -0.5d → 0d |
| 82 | Distribute new keys, cards | 2015-08-03 → 2015-07-30 (-4d) | 2015-08-03 → 2015-07-30 (-4d) | 2.5d → 3d |
| 83 | Pack and move | 2015-08-03 → 2015-07-30 (-4d) | 2015-08-06 → 2015-08-04 (-2d) | -0.5d → 0d |
| 84 | Move complete | 2015-08-06 → 2015-08-04 (-2d) | 2015-08-06 → 2015-08-04 (-2d) | -0.5d → 0d |
| 85 | **Pre-move tasks** | 2015-08-03 → 2015-07-30 (-4d) | 2015-08-06 → 2015-08-04 (-2d) | 9.5d → 10d |
| 86 | Install phone system | 2015-08-03 → 2015-07-30 (-4d) | 2015-08-06 → 2015-08-04 (-2d) | 9.5d → 10d |
| 87 | **Post-Move** | 2015-08-07 → 2015-08-05 (-2d) | 2015-08-20 → 2015-08-18 (-2d) | -0.5d → 0d |
| 88 | Check for damage and missing items | 2015-08-07 → 2015-08-05 (-2d) | 2015-08-20 → 2015-08-18 (-2d) | -0.5d → 0d |
| 89 | Schedule phone training | 2015-08-07 → 2015-08-05 (-2d) | 2015-08-07 → 2015-08-05 (-2d) | 8.5d → 9d |
| 90 | Schedule security training | 2015-08-07 → 2015-08-05 (-2d) | 2015-08-07 → 2015-08-05 (-2d) | 8.5d → 9d |
| 91 | Schedule fire drill | 2015-08-07 → 2015-08-05 (-2d) | 2015-08-07 → 2015-08-05 (-2d) | 8.5d → 9d |
| 92 | Schedule open house for clients | 2015-08-07 → 2015-08-05 (-2d) | 2015-08-07 → 2015-08-05 (-2d) | 8.5d → 9d |
| 93 | Office move complete | 2015-08-20 → 2015-08-18 (-2d) | 2015-08-20 → 2015-08-18 (-2d) | -0.5d → 0d |

## Version 4 (data date 2014-09-12, saved 2013-03-12, file UpdateStatus.mpp)

Last finish 2015-08-18 → 2015-08-24 (+6d). Complete tasks 10 → 9.

Changed:

| ID | Task | Start | Finish | Complete | Total float |
| --- | --- | --- | --- | --- | --- |
| 1 | **Planning Move** |  |  | 79% → 75% | 210.5d → 214.5d |
| 17 | Identify addl costs (furniture, equipment) |  | 2014-08-29 → 2014-09-23 (+25d) |  | 13d → 0d |
| 19 | Planning complete | 2014-09-17 → 2014-09-23 (+6d) | 2014-09-17 → 2014-09-23 (+6d) |  |  |
| 20 | Hire contractors for tenant improvements | 2014-08-25 A → 2014-08-25 | 2014-08-29 A → 2014-08-29 | 100% → 0% | none → 220d |
| 21 | **Prep phone system** | 2014-09-18 → 2014-09-24 (+6d) | 2015-07-29 → 2015-08-04 (+6d) |  |  |
| 22 | Review phone system requirements | 2014-09-18 → 2014-09-24 (+6d) | 2014-09-22 → 2014-09-26 (+4d) |  |  |
| 23 | Order new phone numbers | 2014-09-23 → 2014-09-29 (+6d) | 2014-09-23 → 2014-09-29 (+6d) |  |  |
| 24 | Order long-distance service | 2014-09-24 → 2014-09-30 (+6d) | 2014-09-24 → 2014-09-30 (+6d) |  |  |
| 25 | Phone lines ordered | 2014-09-24 → 2014-09-30 (+6d) | 2014-09-24 → 2014-09-30 (+6d) |  |  |
| 26 | **Design and construction** | 2014-09-18 → 2014-09-24 (+6d) | 2015-01-09 → 2015-01-15 (+6d) |  |  |
| 27 | **Design space** | 2014-09-18 → 2014-09-24 (+6d) | 2014-12-03 → 2014-12-09 (+6d) |  |  |
| 28 | Design office space | 2014-09-18 → 2014-09-24 (+6d) | 2014-10-07 → 2014-10-13 (+6d) |  |  |
| 29 | Prepare drawings | 2014-10-07 → 2014-10-13 (+6d) | 2014-10-14 → 2014-10-20 (+6d) |  |  |
| 30 | Design IT infrastructure | 2014-10-14 → 2014-10-20 (+6d) | 2014-10-28 → 2014-11-03 (+6d) |  |  |
| 31 | Obtain final budget estimates | 2014-10-28 → 2014-11-03 (+6d) | 2014-11-11 → 2014-11-17 (+6d) |  |  |
| 32 | Sign off on plans | 2014-11-11 → 2014-11-17 (+6d) | 2014-11-12 → 2014-11-18 (+6d) |  |  |
| 33 | Obtain permits | 2014-11-12 → 2014-11-18 (+6d) | 2014-12-03 → 2014-12-09 (+6d) |  |  |
| 34 | **Construction** | 2014-12-03 → 2014-12-09 (+6d) | 2014-12-31 → 2015-01-06 (+6d) |  |  |
| 35 | Demolish walls | 2014-12-03 → 2014-12-09 (+6d) | 2014-12-10 → 2014-12-16 (+6d) |  |  |
| 36 | Construct new walls | 2014-12-10 → 2014-12-16 (+6d) | 2014-12-31 → 2015-01-06 (+6d) |  |  |
| 37 | Elec, mech, HVAC | 2014-12-10 → 2014-12-16 (+6d) | 2014-12-31 → 2015-01-06 (+6d) |  |  |
| 38 | **Walkthrough and repair** | 2014-12-31 → 2015-01-06 (+6d) | 2015-01-09 → 2015-01-15 (+6d) |  |  |
| 39 | Repair issues | 2014-12-31 → 2015-01-06 (+6d) | 2015-01-07 → 2015-01-13 (+6d) |  |  |
| 40 | Schedule open house for employees | 2014-12-31 → 2015-01-06 (+6d) | 2015-01-01 → 2015-01-07 (+6d) |  |  |
| 41 | Clean new office | 2015-01-07 → 2015-01-13 (+6d) | 2015-01-08 → 2015-01-14 (+6d) |  |  |
| 42 | Construction complete | 2015-01-08 → 2015-01-14 (+6d) | 2015-01-08 → 2015-01-14 (+6d) |  |  |
| 43 | Open house | 2015-01-08 → 2015-01-14 (+6d) | 2015-01-09 → 2015-01-15 (+6d) |  |  |
| 44 | **Set up services** | 2014-11-13 → 2014-11-19 (+6d) | 2014-11-26 → 2014-12-02 (+6d) |  |  |
| 45 | Order change of address labels | 2014-11-13 → 2014-11-19 (+6d) | 2014-11-13 → 2014-11-19 (+6d) |  |  |
| 46 | Obtain estimates from signage companies | 2014-11-13 → 2014-11-19 (+6d) | 2014-11-21 → 2014-11-27 (+6d) |  |  |
| 47 | Order signage | 2014-11-24 → 2014-11-28 (+4d) | 2014-11-26 → 2014-12-02 (+6d) |  |  |
| 48 | Arrange external maintenance | 2014-11-13 → 2014-11-19 (+6d) | 2014-11-19 → 2014-11-25 (+6d) |  |  |
| 49 | Arrange for trash disposal | 2014-11-13 → 2014-11-19 (+6d) | 2014-11-13 → 2014-11-19 (+6d) |  |  |
| 50 | Arrange for cleaning service | 2014-11-13 → 2014-11-19 (+6d) | 2014-11-13 → 2014-11-19 (+6d) |  |  |
| 51 | Arrange for recycling | 2014-11-13 → 2014-11-19 (+6d) | 2014-11-13 → 2014-11-19 (+6d) |  |  |
| 52 | Order security system | 2014-11-13 → 2014-11-19 (+6d) | 2014-11-14 → 2014-11-20 (+6d) |  |  |
| 53 | Send change of address to vendors, customers, supscriptions | 2014-11-13 → 2014-11-19 (+6d) | 2014-11-13 → 2014-11-19 (+6d) |  |  |
| 54 | Notify all leasers of equipment move | 2014-11-13 → 2014-11-19 (+6d) | 2014-11-13 → 2014-11-19 (+6d) |  |  |
| 55 | Order checks with new address | 2014-11-13 → 2014-11-19 (+6d) | 2014-11-13 → 2014-11-19 (+6d) |  |  |
| 56 | Schedule disconnection of utilities | 2014-11-13 → 2014-11-19 (+6d) | 2014-11-13 → 2014-11-19 (+6d) |  |  |
| 57 | Service setup complete | 2014-11-26 → 2014-12-02 (+6d) | 2015-07-29 → 2015-08-04 (+6d) |  |  |
| 58 | **Create office assignment layout** | 2014-10-07 → 2014-10-13 (+6d) | 2014-10-17 → 2014-10-23 (+6d) |  |  |
| 59 | Assign office spaces | 2014-10-07 → 2014-10-13 (+6d) | 2014-10-14 → 2014-10-20 (+6d) |  |  |
| 60 | Assign new phone numbers, extensions | 2014-10-14 → 2014-10-20 (+6d) | 2014-10-16 → 2014-10-22 (+6d) |  |  |
| 61 | Create new office extension directory | 2014-10-16 → 2014-10-22 (+6d) | 2014-10-17 → 2014-10-23 (+6d) |  |  |
| 62 | Create new office layout map | 2014-10-14 → 2014-10-20 (+6d) | 2014-10-15 → 2014-10-21 (+6d) |  |  |
| 63 | Create new fax cover sheet | 2014-10-17 → 2014-10-23 (+6d) | 2014-10-17 → 2014-10-23 (+6d) |  |  |
| 64 | Office plan complete | 2014-10-17 → 2014-10-23 (+6d) | 2014-10-17 → 2014-10-23 (+6d) |  |  |
| 65 | **Order new stationery** | 2014-10-17 → 2014-10-23 (+6d) | 2014-10-21 → 2014-10-27 (+6d) |  |  |
| 66 | Order new letterhead and envelopes | 2014-10-17 → 2014-10-23 (+6d) | 2014-10-20 → 2014-10-24 (+4d) |  |  |
| 67 | Order new business cards | 2014-10-20 → 2014-10-24 (+4d) | 2014-10-20 → 2014-10-24 (+4d) |  |  |
| 68 | Order new business forms | 2014-10-20 → 2014-10-24 (+4d) | 2014-10-20 → 2014-10-24 (+4d) |  |  |
| 69 | Get shipping labels | 2014-10-20 → 2014-10-24 (+4d) | 2014-10-20 → 2014-10-24 (+4d) |  |  |
| 70 | Create map to location | 2014-10-20 → 2014-10-24 (+4d) | 2014-10-21 → 2014-10-27 (+6d) |  |  |
| 71 | Notify post office of change of address | 2014-10-21 → 2014-10-27 (+6d) | 2014-10-21 → 2014-10-27 (+6d) |  |  |
| 72 | Update company website with new information | 2014-10-17 → 2014-10-23 (+6d) | 2014-10-20 → 2014-10-24 (+4d) |  |  |
| 73 | **Hire movers** | 2014-10-16 → 2014-10-22 (+6d) | 2014-11-03 → 2014-11-07 (+4d) |  |  |
| 74 | Obtain estimates from moving companies | 2014-10-16 → 2014-10-22 (+6d) | 2014-10-31 → 2014-11-06 (+6d) |  |  |
| 75 | Choose moving company | 2014-11-03 → 2014-11-07 (+4d) | 2014-11-03 → 2014-11-07 (+4d) |  |  |
| 76 | **Obtain insurance** | 2014-09-18 → 2014-09-24 (+6d) | 2014-10-06 → 2014-10-10 (+4d) |  |  |
| 77 | Appraise assets | 2014-09-18 → 2014-09-24 (+6d) | 2014-09-22 → 2014-09-26 (+4d) |  |  |
| 78 | Obtain quotes for insurance | 2014-09-23 → 2014-09-29 (+6d) | 2014-10-03 → 2014-10-09 (+6d) |  |  |
| 79 | Purchase insurance | 2014-10-06 → 2014-10-10 (+4d) | 2014-10-06 → 2014-10-10 (+4d) |  |  |
| 80 | Construction and prep complete | 2015-07-29 → 2015-08-04 (+6d) | 2015-07-29 → 2015-08-04 (+6d) |  |  |
| 81 | **Move** | 2015-07-30 → 2015-08-05 (+6d) | 2015-08-04 → 2015-08-10 (+6d) |  |  |
| 82 | Distribute new keys, cards | 2015-07-30 → 2015-08-05 (+6d) | 2015-07-30 → 2015-08-05 (+6d) |  |  |
| 83 | Pack and move | 2015-07-30 → 2015-08-05 (+6d) | 2015-08-04 → 2015-08-10 (+6d) |  |  |
| 84 | Move complete | 2015-08-04 → 2015-08-10 (+6d) | 2015-08-04 → 2015-08-10 (+6d) |  |  |
| 85 | **Pre-move tasks** | 2015-07-30 → 2015-08-05 (+6d) | 2015-08-04 → 2015-08-10 (+6d) |  |  |
| 86 | Install phone system | 2015-07-30 → 2015-08-05 (+6d) | 2015-08-04 → 2015-08-10 (+6d) |  |  |

| ID | Task | Start | Finish |
| --- | --- | --- | --- |
| 87 | **Post-Move** | 2015-08-05 → 2015-08-11 (+6d) | 2015-08-18 → 2015-08-24 (+6d) |
| 88 | Check for damage and missing items | 2015-08-05 → 2015-08-11 (+6d) | 2015-08-18 → 2015-08-24 (+6d) |
| 89 | Schedule phone training | 2015-08-05 → 2015-08-11 (+6d) | 2015-08-05 → 2015-08-11 (+6d) |
| 90 | Schedule security training | 2015-08-05 → 2015-08-11 (+6d) | 2015-08-05 → 2015-08-11 (+6d) |
| 91 | Schedule fire drill | 2015-08-05 → 2015-08-11 (+6d) | 2015-08-05 → 2015-08-11 (+6d) |
| 92 | Schedule open house for clients | 2015-08-05 → 2015-08-11 (+6d) | 2015-08-05 → 2015-08-11 (+6d) |
| 93 | Office move complete | 2015-08-18 → 2015-08-24 (+6d) | 2015-08-18 → 2015-08-24 (+6d) |

## Version 5 (data date 2014-09-12, saved 2013-03-12, file Overtime.mpp)

Last finish stays 2015-08-24.

Changed:

| ID | Task | Other |
| --- | --- | --- |
| 83 | Pack and move | resources none → Movers |

## Version 6 (data date 2014-09-12, saved 2013-03-12, file UpdateCost.mpp)

Last finish stays 2015-08-24. Complete tasks 9 → 7.

Changed:

| ID | Task | Start | Finish | Duration | Complete | Total float | Other |
| --- | --- | --- | --- | --- | --- | --- | --- |
| 1 | **Planning Move** |  |  |  | 75% → 62% | 214.5d → 228.5d |  |
| 2 | **Document requirements** |  | 2014-07-11 A → 2014-07-11 |  | 100% → 91% | none → 291.5d |  |
| 5 | **Mgt meeting** |  | 2014-07-11 A → 2014-07-11 |  | 100% → 60% | none → 291.5d |  |
| 6 | Prepare mgt presentation | 2014-07-01 A → 2014-07-01 | 2014-07-03 A → 2014-07-03 |  | 100% → 0% | none → 297d | resources Relo PM [25%] → Relo PM [25%]; Packet [12 Per] |
| 9 | **Choose new location** | 2014-07-14 A → 2014-07-01 A (-13d) |  | 48d → 57d | 93% → 58% |  |  |
| 10 | **Evaluate lease sites** | 2014-07-14 A → 2014-07-01 A (-13d) |  | 48d → 57d | 93% → 58% |  |  |
| 11 | Identify potential sites | 2014-07-14 A → 2014-07-01 (-13d) | 2014-08-01 A → 2014-07-21 (-11d) |  | 100% → 0% | none → 39d | resources Relo PM [50%]; Relo Assistant [50%] → Relo PM [50%]; Relo Assistant [50%]; Lodging [0.1%] |
| 83 | Pack and move |  |  |  |  |  | resources Movers → none |

## Version 7 (data date 2014-09-12, saved 2013-03-12, file OnTrack.mpp)

Last finish stays 2015-08-24. Complete tasks 7 → 9.

Changed:

| ID | Task | Start | Finish | Duration | Complete | Total float | Other |
| --- | --- | --- | --- | --- | --- | --- | --- |
| 1 | **Planning Move** |  |  |  | 62% → 75% | 228.5d → 214.5d |  |
| 2 | **Document requirements** |  | 2014-07-11 A |  | 91% → 100% | 291.5d → none |  |
| 5 | **Mgt meeting** |  | 2014-07-11 A |  | 60% → 100% | 291.5d → none |  |
| 6 | Prepare mgt presentation | 2014-07-01 A | 2014-07-03 A |  | 0% → 100% | 297d → none | resources Relo PM [25%]; Packet [12 Per] → Relo PM [25%] |
| 9 | **Choose new location** | 2014-07-01 A → 2014-07-14 A (+13d) |  | 57d → 48d | 58% → 93% |  |  |
| 10 | **Evaluate lease sites** | 2014-07-01 A → 2014-07-14 A (+13d) |  | 57d → 48d | 58% → 93% |  |  |
| 11 | Identify potential sites | 2014-07-01 → 2014-07-14 A (+13d) | 2014-07-21 → 2014-08-01 A (+11d) |  | 0% → 100% | 39d → none | resources Relo PM [50%]; Relo Assistant [50%]; Lodging [0.1%] → Relo PM [50%]; Relo Assistant [50%] |
