# Office Move

How a schedule from MS Project changed from version to version. A marks actual dates.

## Version 1 (data date 2014-09-12, saved 2013-03-10, file SaveFormat.mpp)

| ID | WBS | Task | Duration | Start | Finish | Predecessors | Total float | Constraint |
| --- | --- | --- | --- | --- | --- | --- | --- | --- |
| 1 | 1 | **Planning Move** | 84d | 2014-06-02 | 2014-09-25 |  |  |  |
| 2 | 1.1 | **Document requirements** | 31.5d | 2014-06-02 | 2014-07-15 |  | -1d |  |
| 3 |  | Identify physical requirements | 20d | 2014-06-02 | 2014-06-27 |  | -1d |  |
| 4 |  | Draft the budget | 10d | 2014-06-23 | 2014-07-04 | 3FS-2.5% | -1d |  |
| 5 | 1.1.3 | **Mgt meeting** | 6.5d | 2014-07-07 | 2014-07-15 |  | 52.5d |  |
| 6 |  | Prepare mgt presentation | 3d | 2014-07-07 | 2014-07-09 | 4 | 52.5d |  |
| 7 |  | Prepare materials | 3d | 2014-07-10 | 2014-07-14 | 6 | 52.5d |  |
| 8 |  | Present to mgt | 0.5d | 2014-07-15 | 2014-07-15 | 7 | 52.5d |  |
| 9 | 1.2 | **Choose new location** | 50d | 2014-07-07 | 2014-09-12 |  | -1d |  |
| 10 | 1.2.1 | **Evaluate lease sites** | 50d | 2014-07-07 | 2014-09-12 |  | -1d |  |
| 11 |  | Identify potential sites | 18d | 2014-07-07 | 2014-07-30 | 4 | -1d |  |
| 12 |  | Identify tenant improvements | 7d | 2014-07-31 | 2014-08-08 | 11 | -1d |  |
| 13 |  | Select site | 10d | 2014-08-11 | 2014-08-22 | 12, 4 | 4.5d |  |
| 14 |  | Finalize lease | 10d | 2014-08-25 | 2014-09-12 | 13 | 4.5d |  |
| 15 | 1.3 | **Identify costs** | 42d | 2014-07-31 | 2014-09-26 |  | -1d |  |
| 16 |  | Estimate costs for tenant improvements | 10d | 2014-08-11 | 2014-08-22 | 12 | 24d |  |
| 17 |  | Identify addl costs (furniture, equipment) | 20d | 2014-07-31 | 2014-09-19 | 11 | -0.5d |  |
| 18 |  | Inventory office | 25d | 2014-08-11 | 2014-09-26 | 12 | -1d |  |
| 19 |  | Planning complete | 0d | 2014-09-19 | 2014-09-19 | 11, 13, 14, 12, 17 | -0.5d |  |
| 20 |  | Hire contractors for tenant improvements | 5d | 2014-08-25 | 2014-08-29 | 16 | 217.5d |  |
| 21 | 2 | **Prep phone system** | 225d | 2014-09-22 | 2015-07-31 | 19 | 13.5d |  |
| 22 |  | Review phone system requirements | 3d | 2014-09-22 | 2014-09-24 |  | 229.5d |  |
| 23 |  | Order new phone numbers | 1d | 2014-09-25 | 2014-09-25 | 22 | 229.5d |  |
| 24 |  | Order long-distance service | 1d | 2014-09-26 | 2014-09-26 | 23 | 229.5d |  |
| 25 |  | Phone lines ordered | 0d | 2014-09-26 | 2014-09-26 | 24 | 229.5d |  |
| 26 | 2.5 | **Design and construction** | 81.75d | 2014-09-22 | 2015-01-13 |  | 147.75d |  |
| 27 | 2.5.1 | **Design space** | 54.75d | 2014-09-22 | 2014-12-05 |  | 147.75d |  |
| 28 |  | Design office space | 13.75d | 2014-09-22 | 2014-10-09 | 19 | 147.75d |  |
| 29 |  | Prepare drawings | 5d | 2014-10-09 | 2014-10-16 | 28 | 147.75d |  |
| 30 |  | Design IT infrastructure | 10d | 2014-10-16 | 2014-10-30 | 29 | 147.75d |  |
| 31 |  | Obtain final budget estimates | 10d | 2014-10-30 | 2014-11-13 | 30 | 147.75d |  |
| 32 |  | Sign off on plans | 1d | 2014-11-13 | 2014-11-14 | 31 | 147.75d |  |
| 33 |  | Obtain permits | 3w | 2014-11-14 | 2014-12-05 | 32 | 147.75d |  |
| 34 | 2.5.2 | **Construction** | 20d | 2014-12-05 | 2015-01-02 | 33 | 147.75d |  |
| 35 |  | Demolish walls | 5d | 2014-12-05 | 2014-12-12 | 20 | 147.75d |  |
| 36 |  | Construct new walls | 15d | 2014-12-12 | 2015-01-02 | 35 | 147.75d |  |
| 37 |  | Elec, mech, HVAC | 15d | 2014-12-12 | 2015-01-02 | 35 | 147.75d |  |
| 38 | 2.5.3 | **Walkthrough and repair** | 7d | 2015-01-02 | 2015-01-13 | 37, 36 | 147.75d |  |
| 39 |  | Repair issues | 5d | 2015-01-02 | 2015-01-09 |  | 147.75d |  |
| 40 |  | Schedule open house for employees | 1d | 2015-01-02 | 2015-01-05 |  | 162.75d |  |
| 41 |  | Clean new office | 1d | 2015-01-09 | 2015-01-12 | 39 | 147.75d |  |
| 42 |  | Construction complete | 0d | 2015-01-12 | 2015-01-12 | 41 | 156.75d |  |
| 43 |  | Open house | 1d | 2015-01-12 | 2015-01-13 | 42 | 156.75d |  |
| 44 | 2.6 | **Set up services** | 10d | 2014-11-17 | 2014-11-28 | 19FS+2mo | -0.5d |  |
| 45 |  | Order change of address labels | 1d | 2014-11-17 | 2014-11-17 |  | 8.5d |  |
| 46 |  | Obtain estimates from signage companies | 7d | 2014-11-17 | 2014-11-25 |  | -0.5d |  |
| 47 |  | Order signage | 3d | 2014-11-26 | 2014-11-28 | 46 | -0.5d |  |
| 48 |  | Arrange external maintenance | 5d | 2014-11-17 | 2014-11-21 |  | 4.5d |  |
| 49 |  | Arrange for trash disposal | 1d | 2014-11-17 | 2014-11-17 |  | 8.5d |  |
| 50 |  | Arrange for cleaning service | 1d | 2014-11-17 | 2014-11-17 |  | 8.5d |  |
| 51 |  | Arrange for recycling | 1d | 2014-11-17 | 2014-11-17 |  | 8.5d |  |
| 52 |  | Order security system | 2d | 2014-11-17 | 2014-11-18 |  | 7.5d |  |
| 53 |  | Send change of address to vendors, customers, supscriptions | 1d | 2014-11-17 | 2014-11-17 |  | 8.5d |  |
| 54 |  | Notify all leasers of equipment move | 1d | 2014-11-17 | 2014-11-17 |  | 8.5d |  |
| 55 |  | Order checks with new address | 1d | 2014-11-17 | 2014-11-17 |  | 8.5d |  |
| 56 |  | Schedule disconnection of utilities | 1d | 2014-11-17 | 2014-11-17 |  | 8.5d |  |
| 57 |  | Service setup complete | 0d | 2014-11-28 | 2015-07-31 | 44 | -0.5d | start no earlier than 2010-09-20 |
| 58 | 2.8 | **Create office assignment layout** | 8.12d | 2014-10-09 | 2014-10-21 |  | 202.62d |  |
| 59 |  | Assign office spaces | 5d | 2014-10-09 | 2014-10-16 | 28 | 202.62d |  |
| 60 |  | Assign new phone numbers, extensions | 2d | 2014-10-16 | 2014-10-20 | 59 | 202.62d |  |
| 61 |  | Create new office extension directory | 1d | 2014-10-20 | 2014-10-21 | 60 | 202.62d |  |
| 62 |  | Create new office layout map | 1d | 2014-10-16 | 2014-10-17 | 59 | 204.75d |  |
| 63 |  | Create new fax cover sheet | 0.12d | 2014-10-21 | 2014-10-21 | 61 | 202.62d |  |
| 64 |  | Office plan complete | 0d | 2014-10-21 | 2014-10-21 | 62, 61, 63 | 202.62d |  |
| 65 | 2.9 | **Order new stationery** | 1.5d | 2014-10-21 | 2014-10-23 | 64 | 205.12d |  |
| 66 |  | Order new letterhead and envelopes | 0.25d | 2014-10-21 | 2014-10-22 |  | 205.12d |  |
| 67 |  | Order new business cards | 0.25d | 2014-10-22 | 2014-10-22 | 66 | 205.12d |  |
| 68 |  | Order new business forms | 0.25d | 2014-10-22 | 2014-10-22 | 67 | 205.12d |  |
| 69 |  | Get shipping labels | 0.25d | 2014-10-22 | 2014-10-22 | 68 | 205.12d |  |
| 70 |  | Create map to location | 0.25d | 2014-10-22 | 2014-10-23 | 69 | 205.12d |  |

| ID | WBS | Task | Duration | Start | Finish | Predecessors | Total float |
| --- | --- | --- | --- | --- | --- | --- | --- |
| 71 |  | Notify post office of change of address | 0.25d | 2014-10-23 | 2014-10-23 | 70 | 205.12d |
| 72 |  | Update company website with new information | 1d | 2014-10-21 | 2014-10-22 |  | 205.62d |
| 73 | 2.10 | **Hire movers** | 13d | 2014-10-20 | 2014-11-05 | 19FS+1mo | 191.5d |
| 74 |  | Obtain estimates from moving companies | 12d | 2014-10-20 | 2014-11-04 |  | 191.5d |
| 75 |  | Choose moving company | 1d | 2014-11-05 | 2014-11-05 | 74 | 191.5d |
| 76 | 2.11 | **Obtain insurance** | 13d | 2014-09-22 | 2014-10-08 |  | 211.5d |
| 77 |  | Appraise assets | 3d | 2014-09-22 | 2014-09-24 |  | 211.5d |
| 78 |  | Obtain quotes for insurance | 1d | 2014-09-25 | 2014-10-07 | 77 | 211.5d |
| 79 |  | Purchase insurance | 1d | 2014-10-08 | 2014-10-08 | 78 | 211.5d |
| 80 |  | Construction and prep complete | 0d | 2015-07-31 | 2015-07-31 | 57, 75, 79, 58 | -0.5d |
| 81 | 4 | **Move** | 4d | 2015-08-03 | 2015-08-06 | 80 | -0.5d |
| 82 |  | Distribute new keys, cards | 1d | 2015-08-03 | 2015-08-03 |  | 2.5d |
| 83 |  | Pack and move | 4d | 2015-08-03 | 2015-08-06 | 18 | -0.5d |
| 84 |  | Move complete | 0d | 2015-08-06 | 2015-08-06 | 60, 82, 66, 67, 68, 39, 41, 71, 72, 56, 83, 18 | -0.5d |
| 85 | 5 | **Pre-move tasks** | 4d | 2015-08-03 | 2015-08-06 | 81SS | 9.5d |
| 86 |  | Install phone system | 4d | 2015-08-03 | 2015-08-06 | 25 | 9.5d |
| 87 | 6 | **Post-Move** | 10d | 2015-08-07 | 2015-08-20 | 84 | -0.5d |
| 88 |  | Check for damage and missing items | 10d | 2015-08-07 | 2015-08-20 |  | -0.5d |
| 89 |  | Schedule phone training | 1d | 2015-08-07 | 2015-08-07 |  | 8.5d |
| 90 |  | Schedule security training | 1d | 2015-08-07 | 2015-08-07 |  | 8.5d |
| 91 |  | Schedule fire drill | 1d | 2015-08-07 | 2015-08-07 |  | 8.5d |
| 92 |  | Schedule open house for clients | 1d | 2015-08-07 | 2015-08-07 |  | 8.5d |
| 93 |  | Office move complete | 0d | 2015-08-20 | 2015-08-20 | 84, 88, 89, 90, 91, 92 | -0.5d |

## Version 2 (data date 2014-09-12, saved 2013-03-12, file OneProject.mpp)

Last finish 2015-08-20 → 2015-08-24 (+4d). Complete tasks 0 → 9.

Changed:

| ID | Task | Start | Finish | Duration | Complete | Total float | Other |
| --- | --- | --- | --- | --- | --- | --- | --- |
| 1 | **Planning Move** | 2014-06-02 A | 2014-09-25 → 2014-10-08 (+13d) | 84d → 92.5d | 0% → 75% | none → 214.5d | baseline start none → 2014-06-02; baseline finish none → 2014-09-26 |
| 2 | **Document requirements** | 2014-06-02 A | 2014-07-15 → 2014-07-11 A (-4d) | 31.5d → 29.5d | 0% → 100% | -1d → none | baseline start none → 2014-06-02; baseline finish none → 2014-07-15 |
| 3 | Identify physical requirements | 2014-06-02 A | 2014-06-27 → 2014-06-24 A (-3d) | 20d → 17d | 0% → 100% | -1d → none | baseline start none → 2014-06-02; baseline finish none → 2014-06-27 |
| 4 | Draft the budget | 2014-06-23 → 2014-06-18 A (-5d) | 2014-07-04 → 2014-06-30 A (-4d) | 10d → 9d | 0% → 100% | -1d → none | baseline start none → 2014-06-23; baseline finish none → 2014-07-04 |
| 5 | **Mgt meeting** | 2014-07-07 → 2014-07-01 A (-6d) | 2014-07-15 → 2014-07-11 A (-4d) | 6.5d → 8.5d | 0% → 100% | 52.5d → none | baseline start none → 2014-07-07; baseline finish none → 2014-07-15 |
| 6 | Prepare mgt presentation | 2014-07-07 → 2014-07-01 A (-6d) | 2014-07-09 → 2014-07-03 A (-6d) |  | 0% → 100% | 52.5d → none | baseline start none → 2014-07-07; baseline finish none → 2014-07-09 |
| 7 | Prepare materials | 2014-07-10 → 2014-07-07 A (-3d) | 2014-07-14 → 2014-07-10 A (-4d) | 3d → 4d | 0% → 100% | 52.5d → none | baseline start none → 2014-07-10; baseline finish none → 2014-07-14 |
| 8 | Present to mgt | 2014-07-15 → 2014-07-11 A (-4d) | 2014-07-15 → 2014-07-11 A (-4d) | 0.5d → 4h | 0% → 100% | 52.5d → none | baseline start none → 2014-07-15; baseline finish none → 2014-07-15 |
| 9 | **Choose new location** | 2014-07-07 → 2014-07-14 A (+7d) | 2014-09-12 → 2014-09-17 (+5d) | 50d → 48d | 0% → 93% | -1d → 4d | baseline start none → 2014-07-07; baseline finish none → 2014-09-12 |
| 10 | **Evaluate lease sites** | 2014-07-07 → 2014-07-14 A (+7d) | 2014-09-12 → 2014-09-17 (+5d) | 50d → 48d | 0% → 93% | -1d → 4d | baseline start none → 2014-07-07; baseline finish none → 2014-09-12 |
| 11 | Identify potential sites | 2014-07-07 → 2014-07-14 A (+7d) | 2014-07-30 → 2014-08-01 A (+2d) | 18d → 15d | 0% → 100% | -1d → none | baseline start none → 2014-07-07; baseline finish none → 2014-07-30 |
| 12 | Identify tenant improvements | 2014-07-31 → 2014-08-04 A (+4d) | 2014-08-08 → 2014-08-15 A (+7d) | 7d → 10d | 0% → 100% | -1d → none | baseline start none → 2014-07-31; baseline finish none → 2014-08-08 |
| 13 | Select site | 2014-08-11 → 2014-08-18 A (+7d) | 2014-08-22 → 2014-08-27 A (+5d) | 10d → 8d | 0% → 100% | 4.5d → none | baseline start none → 2014-08-11; baseline finish none → 2014-08-22 |
| 14 | Finalize lease | 2014-08-25 → 2014-08-28 A (+3d) | 2014-09-12 → 2014-09-17 (+5d) |  | 0% → 70% | 4.5d → 4d | baseline start none → 2014-08-25; baseline finish none → 2014-09-12 |
| 15 | **Identify costs** | 2014-07-31 → 2014-08-04 A (+4d) | 2014-09-26 → 2014-10-08 (+12d) | 42d → 47.5d | 0% → 51% | -1d → 214.5d | baseline start none → 2014-07-31; baseline finish none → 2014-09-26 |
| 16 | Estimate costs for tenant improvements | 2014-08-11 → 2014-08-18 A (+7d) | 2014-08-22 A | 10d → 5d | 0% → 100% | 24d → none | baseline start none → 2014-08-11; baseline finish none → 2014-08-22 |
| 17 | Identify addl costs (furniture, equipment) | 2014-07-31 → 2014-08-04 A (+4d) | 2014-09-19 → 2014-09-23 (+4d) |  | 0% → 65% | -0.5d → 0d | baseline start none → 2014-07-31; baseline finish none → 2014-09-19 |
| 18 | Inventory office | 2014-08-11 → 2014-08-20 A (+9d) | 2014-09-26 → 2014-10-08 (+12d) |  | 0% → 30% | -1d → 214.5d | baseline start none → 2014-08-11; baseline finish none → 2014-09-26 |
| 19 | Planning complete | 2014-09-19 → 2014-09-23 (+4d) | 2014-09-19 → 2014-09-23 (+4d) |  |  | -0.5d → 0d | baseline start none → 2014-09-19; baseline finish none → 2014-09-19 |
| 20 | Hire contractors for tenant improvements |  |  |  |  | 217.5d → 220d | baseline start none → 2014-08-25; baseline finish none → 2014-08-29 |
| 21 | **Prep phone system** | 2014-09-22 → 2014-09-24 (+2d) | 2015-07-31 → 2015-08-04 (+4d) |  |  | 13.5d → 14d | baseline start none → 2014-09-22; baseline finish none → 2015-07-31 |
| 22 | Review phone system requirements | 2014-09-22 → 2014-09-24 (+2d) | 2014-09-24 → 2014-09-26 (+2d) |  |  | 229.5d → 230d | baseline start none → 2014-09-22; baseline finish none → 2014-09-24 |
| 23 | Order new phone numbers | 2014-09-25 → 2014-09-29 (+4d) | 2014-09-25 → 2014-09-29 (+4d) |  |  | 229.5d → 230d | baseline start none → 2014-09-25; baseline finish none → 2014-09-25 |
| 24 | Order long-distance service | 2014-09-26 → 2014-09-30 (+4d) | 2014-09-26 → 2014-09-30 (+4d) |  |  | 229.5d → 230d | baseline start none → 2014-09-26; baseline finish none → 2014-09-26 |
| 25 | Phone lines ordered | 2014-09-26 → 2014-09-30 (+4d) | 2014-09-26 → 2014-09-30 (+4d) |  |  | 229.5d → 230d | baseline start none → 2014-09-26; baseline finish none → 2014-09-26 |
| 26 | **Design and construction** | 2014-09-22 → 2014-09-24 (+2d) | 2015-01-13 → 2015-01-15 (+2d) |  |  | 147.75d → 148.25d | baseline start none → 2014-09-22; baseline finish none → 2015-01-13 |
| 27 | **Design space** | 2014-09-22 → 2014-09-24 (+2d) | 2014-12-05 → 2014-12-09 (+4d) |  |  | 147.75d → 148.25d | baseline start none → 2014-09-22; baseline finish none → 2014-12-05 |
| 28 | Design office space | 2014-09-22 → 2014-09-24 (+2d) | 2014-10-09 → 2014-10-13 (+4d) |  |  | 147.75d → 148.25d | baseline start none → 2014-09-22; baseline finish none → 2014-10-09 |
| 29 | Prepare drawings | 2014-10-09 → 2014-10-13 (+4d) | 2014-10-16 → 2014-10-20 (+4d) |  |  | 147.75d → 148.25d | baseline start none → 2014-10-09; baseline finish none → 2014-10-16 |
| 30 | Design IT infrastructure | 2014-10-16 → 2014-10-20 (+4d) | 2014-10-30 → 2014-11-03 (+4d) |  |  | 147.75d → 148.25d | baseline start none → 2014-10-16; baseline finish none → 2014-10-30 |
| 31 | Obtain final budget estimates | 2014-10-30 → 2014-11-03 (+4d) | 2014-11-13 → 2014-11-17 (+4d) |  |  | 147.75d → 148.25d | baseline start none → 2014-10-30; baseline finish none → 2014-11-13 |
| 32 | Sign off on plans | 2014-11-13 → 2014-11-17 (+4d) | 2014-11-14 → 2014-11-18 (+4d) |  |  | 147.75d → 148.25d | baseline start none → 2014-11-13; baseline finish none → 2014-11-14 |
| 33 | Obtain permits | 2014-11-14 → 2014-11-18 (+4d) | 2014-12-05 → 2014-12-09 (+4d) |  |  | 147.75d → 148.25d | baseline start none → 2014-11-14; baseline finish none → 2014-12-05 |
| 34 | **Construction** | 2014-12-05 → 2014-12-09 (+4d) | 2015-01-02 → 2015-01-06 (+4d) |  |  | 147.75d → 148.25d | baseline start none → 2014-12-05; baseline finish none → 2015-01-02 |
| 35 | Demolish walls | 2014-12-05 → 2014-12-09 (+4d) | 2014-12-12 → 2014-12-16 (+4d) |  |  | 147.75d → 148.25d | baseline start none → 2014-12-05; baseline finish none → 2014-12-12 |
| 36 | Construct new walls | 2014-12-12 → 2014-12-16 (+4d) | 2015-01-02 → 2015-01-06 (+4d) |  |  | 147.75d → 148.25d | baseline start none → 2014-12-12; baseline finish none → 2015-01-02 |
| 37 | Elec, mech, HVAC | 2014-12-12 → 2014-12-16 (+4d) | 2015-01-02 → 2015-01-06 (+4d) |  |  | 147.75d → 148.25d | baseline start none → 2014-12-12; baseline finish none → 2015-01-02 |
| 38 | **Walkthrough and repair** | 2015-01-02 → 2015-01-06 (+4d) | 2015-01-13 → 2015-01-15 (+2d) |  |  | 147.75d → 148.25d | baseline start none → 2015-01-02; baseline finish none → 2015-01-13 |
| 39 | Repair issues | 2015-01-02 → 2015-01-06 (+4d) | 2015-01-09 → 2015-01-13 (+4d) |  |  | 147.75d → 148.25d | baseline start none → 2015-01-02; baseline finish none → 2015-01-09 |
| 40 | Schedule open house for employees | 2015-01-02 → 2015-01-06 (+4d) | 2015-01-05 → 2015-01-07 (+2d) |  |  | 162.75d → 163.25d |  |
| 41 | Clean new office | 2015-01-09 → 2015-01-13 (+4d) | 2015-01-12 → 2015-01-14 (+2d) |  |  | 147.75d → 148.25d | baseline start none → 2015-01-09; baseline finish none → 2015-01-12 |
| 42 | Construction complete | 2015-01-12 → 2015-01-14 (+2d) | 2015-01-12 → 2015-01-14 (+2d) |  |  | 156.75d → 157.25d | baseline start none → 2015-01-12; baseline finish none → 2015-01-12 |
| 43 | Open house | 2015-01-12 → 2015-01-14 (+2d) | 2015-01-13 → 2015-01-15 (+2d) |  |  | 156.75d → 157.25d | baseline start none → 2015-01-12; baseline finish none → 2015-01-13 |
| 44 | **Set up services** | 2014-11-17 → 2014-11-19 (+2d) | 2014-11-28 → 2014-12-02 (+4d) |  |  | -0.5d → 0d | baseline start none → 2014-11-17; baseline finish none → 2014-11-28 |
| 45 | Order change of address labels | 2014-11-17 → 2014-11-19 (+2d) | 2014-11-17 → 2014-11-19 (+2d) |  |  | 8.5d → 9d |  |
| 46 | Obtain estimates from signage companies | 2014-11-17 → 2014-11-19 (+2d) | 2014-11-25 → 2014-11-27 (+2d) |  |  | -0.5d → 0d |  |
| 47 | Order signage | 2014-11-26 → 2014-11-28 (+2d) | 2014-11-28 → 2014-12-02 (+4d) |  |  | -0.5d → 0d |  |
| 48 | Arrange external maintenance | 2014-11-17 → 2014-11-19 (+2d) | 2014-11-21 → 2014-11-25 (+4d) |  |  | 4.5d → 5d |  |
| 49 | Arrange for trash disposal | 2014-11-17 → 2014-11-19 (+2d) | 2014-11-17 → 2014-11-19 (+2d) |  |  | 8.5d → 9d |  |
| 50 | Arrange for cleaning service | 2014-11-17 → 2014-11-19 (+2d) | 2014-11-17 → 2014-11-19 (+2d) |  |  | 8.5d → 9d |  |
| 51 | Arrange for recycling | 2014-11-17 → 2014-11-19 (+2d) | 2014-11-17 → 2014-11-19 (+2d) |  |  | 8.5d → 9d |  |
| 52 | Order security system | 2014-11-17 → 2014-11-19 (+2d) | 2014-11-18 → 2014-11-20 (+2d) |  |  | 7.5d → 8d |  |
| 53 | Send change of address to vendors, customers, supscriptions | 2014-11-17 → 2014-11-19 (+2d) | 2014-11-17 → 2014-11-19 (+2d) |  |  | 8.5d → 9d |  |
| 54 | Notify all leasers of equipment move | 2014-11-17 → 2014-11-19 (+2d) | 2014-11-17 → 2014-11-19 (+2d) |  |  | 8.5d → 9d |  |
| 55 | Order checks with new address | 2014-11-17 → 2014-11-19 (+2d) | 2014-11-17 → 2014-11-19 (+2d) |  |  | 8.5d → 9d |  |
| 56 | Schedule disconnection of utilities | 2014-11-17 → 2014-11-19 (+2d) | 2014-11-17 → 2014-11-19 (+2d) |  |  | 8.5d → 9d |  |
| 57 | Service setup complete | 2014-11-28 → 2014-12-02 (+4d) | 2015-07-31 → 2015-08-04 (+4d) |  |  | -0.5d → 0d | baseline start none → 2014-11-28; baseline finish none → 2015-07-31 |
| 58 | **Create office assignment layout** | 2014-10-09 → 2014-10-13 (+4d) | 2014-10-21 → 2014-10-23 (+2d) |  |  | 202.62d → 203.12d | baseline start none → 2014-10-09; baseline finish none → 2014-10-21 |
| 59 | Assign office spaces | 2014-10-09 → 2014-10-13 (+4d) | 2014-10-16 → 2014-10-20 (+4d) |  |  | 202.62d → 203.12d | baseline start none → 2014-10-09; baseline finish none → 2014-10-16 |
| 60 | Assign new phone numbers, extensions | 2014-10-16 → 2014-10-20 (+4d) | 2014-10-20 → 2014-10-22 (+2d) |  |  | 202.62d → 203.12d | baseline start none → 2014-10-16; baseline finish none → 2014-10-20 |
| 61 | Create new office extension directory | 2014-10-20 → 2014-10-22 (+2d) | 2014-10-21 → 2014-10-23 (+2d) |  |  | 202.62d → 203.12d | baseline start none → 2014-10-20; baseline finish none → 2014-10-21 |
| 62 | Create new office layout map | 2014-10-16 → 2014-10-20 (+4d) | 2014-10-17 → 2014-10-21 (+4d) |  |  | 204.75d → 205.25d | baseline start none → 2014-10-16; baseline finish none → 2014-10-17 |
| 63 | Create new fax cover sheet | 2014-10-21 → 2014-10-23 (+2d) | 2014-10-21 → 2014-10-23 (+2d) |  |  | 202.62d → 203.12d | baseline start none → 2014-10-21; baseline finish none → 2014-10-21 |
| 64 | Office plan complete | 2014-10-21 → 2014-10-23 (+2d) | 2014-10-21 → 2014-10-23 (+2d) |  |  | 202.62d → 203.12d | baseline start none → 2014-10-21; baseline finish none → 2014-10-21 |
| 65 | **Order new stationery** | 2014-10-21 → 2014-10-23 (+2d) | 2014-10-23 → 2014-10-27 (+4d) |  |  | 205.12d → 205.62d | baseline start none → 2014-10-21; baseline finish none → 2014-10-23 |
| 66 | Order new letterhead and envelopes | 2014-10-21 → 2014-10-23 (+2d) | 2014-10-22 → 2014-10-24 (+2d) |  |  | 205.12d → 205.62d | baseline start none → 2014-10-21; baseline finish none → 2014-10-22 |
| 67 | Order new business cards | 2014-10-22 → 2014-10-24 (+2d) | 2014-10-22 → 2014-10-24 (+2d) |  |  | 205.12d → 205.62d | baseline start none → 2014-10-22; baseline finish none → 2014-10-22 |
| 68 | Order new business forms | 2014-10-22 → 2014-10-24 (+2d) | 2014-10-22 → 2014-10-24 (+2d) |  |  | 205.12d → 205.62d | baseline start none → 2014-10-22; baseline finish none → 2014-10-22 |
| 69 | Get shipping labels | 2014-10-22 → 2014-10-24 (+2d) | 2014-10-22 → 2014-10-24 (+2d) |  |  | 205.12d → 205.62d | baseline start none → 2014-10-22; baseline finish none → 2014-10-22 |
| 70 | Create map to location | 2014-10-22 → 2014-10-24 (+2d) | 2014-10-23 → 2014-10-27 (+4d) |  |  | 205.12d → 205.62d | baseline start none → 2014-10-22; baseline finish none → 2014-10-23 |

| ID | Task | Start | Finish | Total float | Other |
| --- | --- | --- | --- | --- | --- |
| 71 | Notify post office of change of address | 2014-10-23 → 2014-10-27 (+4d) | 2014-10-23 → 2014-10-27 (+4d) | 205.12d → 205.62d | baseline start none → 2014-10-23; baseline finish none → 2014-10-23 |
| 72 | Update company website with new information | 2014-10-21 → 2014-10-23 (+2d) | 2014-10-22 → 2014-10-24 (+2d) | 205.62d → 206.12d | baseline start none → 2014-10-21; baseline finish none → 2014-10-22 |
| 73 | **Hire movers** | 2014-10-20 → 2014-10-22 (+2d) | 2014-11-05 → 2014-11-07 (+2d) | 191.5d → 192d | baseline start none → 2014-10-20; baseline finish none → 2014-11-05 |
| 74 | Obtain estimates from moving companies | 2014-10-20 → 2014-10-22 (+2d) | 2014-11-04 → 2014-11-06 (+2d) | 191.5d → 192d | baseline start none → 2014-10-20; baseline finish none → 2014-11-04 |
| 75 | Choose moving company | 2014-11-05 → 2014-11-07 (+2d) | 2014-11-05 → 2014-11-07 (+2d) | 191.5d → 192d | baseline start none → 2014-11-05; baseline finish none → 2014-11-05 |
| 76 | **Obtain insurance** | 2014-09-22 → 2014-09-24 (+2d) | 2014-10-08 → 2014-10-10 (+2d) | 211.5d → 212d |  |
| 77 | Appraise assets | 2014-09-22 → 2014-09-24 (+2d) | 2014-09-24 → 2014-09-26 (+2d) | 211.5d → 212d | baseline start none → 2014-09-22; baseline finish none → 2014-09-24 |
| 78 | Obtain quotes for insurance | 2014-09-25 → 2014-09-29 (+4d) | 2014-10-07 → 2014-10-09 (+2d) | 211.5d → 212d | baseline start none → 2014-09-25; baseline finish none → 2014-10-07 |
| 79 | Purchase insurance | 2014-10-08 → 2014-10-10 (+2d) | 2014-10-08 → 2014-10-10 (+2d) | 211.5d → 212d | baseline start none → 2014-10-08; baseline finish none → 2014-10-08 |
| 80 | Construction and prep complete | 2015-07-31 → 2015-08-04 (+4d) | 2015-07-31 → 2015-08-04 (+4d) | -0.5d → 0d | baseline start none → 2015-07-31; baseline finish none → 2015-07-31 |
| 81 | **Move** | 2015-08-03 → 2015-08-05 (+2d) | 2015-08-06 → 2015-08-10 (+4d) | -0.5d → 0d | baseline start none → 2015-08-03; baseline finish none → 2015-08-06 |
| 82 | Distribute new keys, cards | 2015-08-03 → 2015-08-05 (+2d) | 2015-08-03 → 2015-08-05 (+2d) | 2.5d → 3d | baseline start none → 2015-08-03; baseline finish none → 2015-08-03 |
| 83 | Pack and move | 2015-08-03 → 2015-08-05 (+2d) | 2015-08-06 → 2015-08-10 (+4d) | -0.5d → 0d | baseline start none → 2015-08-03; baseline finish none → 2015-08-06 |
| 84 | Move complete | 2015-08-06 → 2015-08-10 (+4d) | 2015-08-06 → 2015-08-10 (+4d) | -0.5d → 0d | baseline start none → 2015-08-06; baseline finish none → 2015-08-06 |
| 85 | **Pre-move tasks** | 2015-08-03 → 2015-08-05 (+2d) | 2015-08-06 → 2015-08-10 (+4d) | 9.5d → 10d | baseline start none → 2015-08-03; baseline finish none → 2015-08-06 |
| 86 | Install phone system | 2015-08-03 → 2015-08-05 (+2d) | 2015-08-06 → 2015-08-10 (+4d) | 9.5d → 10d | baseline start none → 2015-08-03; baseline finish none → 2015-08-06 |
| 87 | **Post-Move** | 2015-08-07 → 2015-08-11 (+4d) | 2015-08-20 → 2015-08-24 (+4d) | -0.5d → 0d | baseline start none → 2015-08-07; baseline finish none → 2015-08-20 |
| 88 | Check for damage and missing items | 2015-08-07 → 2015-08-11 (+4d) | 2015-08-20 → 2015-08-24 (+4d) | -0.5d → 0d | baseline start none → 2015-08-07; baseline finish none → 2015-08-20 |
| 89 | Schedule phone training | 2015-08-07 → 2015-08-11 (+4d) | 2015-08-07 → 2015-08-11 (+4d) | 8.5d → 9d | baseline start none → 2015-08-07; baseline finish none → 2015-08-07 |
| 90 | Schedule security training | 2015-08-07 → 2015-08-11 (+4d) | 2015-08-07 → 2015-08-11 (+4d) | 8.5d → 9d | baseline start none → 2015-08-07; baseline finish none → 2015-08-07 |
| 91 | Schedule fire drill | 2015-08-07 → 2015-08-11 (+4d) | 2015-08-07 → 2015-08-11 (+4d) | 8.5d → 9d | baseline start none → 2015-08-07; baseline finish none → 2015-08-07 |
| 92 | Schedule open house for clients | 2015-08-07 → 2015-08-11 (+4d) | 2015-08-07 → 2015-08-11 (+4d) | 8.5d → 9d | baseline start none → 2015-08-07; baseline finish none → 2015-08-07 |
| 93 | Office move complete | 2015-08-20 → 2015-08-24 (+4d) | 2015-08-20 → 2015-08-24 (+4d) | -0.5d → 0d | baseline start none → 2015-08-20; baseline finish none → 2015-08-20 |
